| id | name | start | end | duration | duration_gantt | order | attributes | milestone |
| --- | --- | --- | --- | --- | --- | --- | --- | --- |
| 1 | 1.1.1 Acta de constitución del proyecto, firmada con la Contraparte Técnica | 2027-02-01 | 2027-02-09 | 7 | 7 | 0 | 1 1.1.1 Acta de constitución del proyecto, firmada con la Contraparte Técnica #4472c4 false 2027-02-01 7 0 true |  |
| 2 | 1.1.2 Documento de validación con el CLIENTE de los problemas y metas del proyecto | 2027-02-01 | 2027-02-09 | 7 | 7 | 1 | 2 1.1.2 Documento de validación con el CLIENTE de los problemas y metas del proyecto #4472c4 false 2027-02-01 7 0 true |  |
| 3 | 1.1.3 Acta de confirmaciones iniciales con el CLIENTE (inicio, lácteos, ventanas y acuse tributario) | 2027-02-01 | 2027-02-09 | 7 | 7 | 2 | 3 1.1.3 Acta de confirmaciones iniciales con el CLIENTE (inicio, lácteos, ventanas y acuse tributario) #4472c4 false 2027-02-01 7 0 true |  |
| 4 | 1.3.1 Registro de interesados con su influencia, interés y estrategia | 2027-02-01 | 2027-02-09 | 7 | 7 | 3 | 4 1.3.1 Registro de interesados con su influencia, interés y estrategia #4472c4 false 2027-02-01 7 0 true |  |
| 5 | 1.3.2 Plan de comunicaciones con calendario y canales por grupo de interés | 2027-02-01 | 2027-02-09 | 7 | 7 | 4 | 5 1.3.2 Plan de comunicaciones con calendario y canales por grupo de interés #4472c4 false 2027-02-01 7 0 true |  |
| 6 | 1.8.1 Matriz de cumplimiento normativo por obligación legal, con su control y su evidencia | 2027-02-01 | 2027-02-09 | 7 | 7 | 5 | 6 1.8.1 Matriz de cumplimiento normativo por obligación legal, con su control y su evidencia #4472c4 false 2027-02-01 7 0 true |  |
| 7 | 1.8.2 Acuerdo de tratamiento de datos personales con el CLIENTE | 2027-02-01 | 2027-02-09 | 7 | 7 | 6 | 7 1.8.2 Acuerdo de tratamiento de datos personales con el CLIENTE #4472c4 false 2027-02-01 7 0 true |  |
| 8 | 2.1.1 Documento de especificación de requerimientos y línea base de alcance de la Etapa 1 (H1) | 2027-02-01 | 2027-02-09 | 7 | 7 | 7 | 8 2.1.1 Documento de especificación de requerimientos y línea base de alcance de la Etapa 1 (H1) #4472c4 false 2027-02-01 7 0 true |  |
| 9 | 2.1.5 Especificación de interfaces heredadas y perfil de intercambio con cadenas | 2027-02-01 | 2027-02-09 | 7 | 7 | 8 | 9 2.1.5 Especificación de interfaces heredadas y perfil de intercambio con cadenas #4472c4 false 2027-02-01 7 0 true |  |
| 10 | 2.4.1 Plano de la sala técnica de Talca, con su cálculo eléctrico y térmico | 2027-02-01 | 2027-02-26 | 20 | 20 | 9 | 10 2.4.1 Plano de la sala técnica de Talca, con su cálculo eléctrico y térmico #4472c4 false 2027-02-01 20 0 true |  |
| 11 | 2.4.2 Plano de distribución de los racks R01 de servidores y R02 de comunicaciones | 2027-02-01 | 2027-02-26 | 20 | 20 | 10 | 11 2.4.2 Plano de distribución de los racks R01 de servidores y R02 de comunicaciones #4472c4 false 2027-02-01 20 0 true |  |
| 12 | 8.1.4 Especificación y compra del sistema de cadena de frío | 2027-02-01 | 2027-03-31 | 42 | 42 | 11 | 12 8.1.4 Especificación y compra del sistema de cadena de frío #c00000 false 2027-02-01 42 0 true |  |
| 13 | 2.1.4 Captura de reglas de ruteo | 2027-02-01 | 2027-04-30 | 64 | 64 | 12 | 13 2.1.4 Captura de reglas de ruteo #4472c4 false 2027-02-01 64 0 true |  |
| 14 | Etapa 1 · Desarrollo (meses 1 a 12) | 2027-02-01 | 2028-01-31 | 252 | 253 | 13 | 14 Etapa 1 · Desarrollo (meses 1 a 12) #4472c4 false 2027-02-01 253 0 true |  |
| 15 | 1.2.1 Plan para la dirección del proyecto y calendario de congelamientos | 2027-02-10 | 2027-02-18 | 7 | 7 | 14 | 15 1.2.1 Plan para la dirección del proyecto y calendario de congelamientos #4472c4 false 2027-02-10 7 0 true |  |
| 16 | 1.2.2 EDT y diccionario de la EDT (línea base del alcance) | 2027-03-01 | 2027-03-09 | 7 | 7 | 15 | 16 1.2.2 EDT y diccionario de la EDT (línea base del alcance) #4472c4 false 2027-03-01 7 0 true |  |
| 17 | 1.2.3 Carta Gantt de 56 meses con los hitos H1 a H12 y la ruta crítica | 2027-03-01 | 2027-03-09 | 7 | 7 | 16 | 17 1.2.3 Carta Gantt de 56 meses con los hitos H1 a H12 y la ruta crítica #4472c4 false 2027-03-01 7 0 true |  |
| 18 | 1.2.4 Documento de nivelación de recursos y frentes de solapamiento | 2027-03-01 | 2027-03-09 | 7 | 7 | 17 | 18 1.2.4 Documento de nivelación de recursos y frentes de solapamiento #4472c4 false 2027-03-01 7 0 true |  |
| 19 | 1.4.1 Plan de calidad y plan de pruebas | 2027-03-01 | 2027-03-09 | 7 | 7 | 18 | 19 1.4.1 Plan de calidad y plan de pruebas #4472c4 false 2027-03-01 7 0 true |  |
| 20 | 1.5.1 Plan de riesgos y registro inicial de riesgos según ISO 31000 | 2027-03-01 | 2027-03-09 | 7 | 7 | 19 | 20 1.5.1 Plan de riesgos y registro inicial de riesgos según ISO 31000 #4472c4 false 2027-03-01 7 0 true |  |
| 21 | 1.8.3 Registro de actividades de tratamiento y evaluación de impacto en protección de datos | 2027-03-01 | 2027-03-09 | 7 | 7 | 20 | 21 1.8.3 Registro de actividades de tratamiento y evaluación de impacto en protección de datos #4472c4 false 2027-03-01 7 0 true |  |
| 22 | 2.1.3 Matriz de trazabilidad: requerimiento, módulo, paquete y prueba (H1) | 2027-03-01 | 2027-03-09 | 7 | 7 | 21 | 22 2.1.3 Matriz de trazabilidad: requerimiento, módulo, paquete y prueba (H1) #4472c4 false 2027-03-01 7 0 true |  |
| 23 | 2.2.1 Documento de arquitectura lógica: capas, módulos M1 a M12 e interfaces | 2027-03-01 | 2027-03-29 | 20 | 20 | 22 | 23 2.2.1 Documento de arquitectura lógica: capas, módulos M1 a M12 e interfaces #4472c4 false 2027-03-01 20 0 true |  |
| 24 | 2.2.2 Documento de arquitectura física híbrida | 2027-03-01 | 2027-03-29 | 20 | 20 | 23 | 24 2.2.2 Documento de arquitectura física híbrida #4472c4 false 2027-03-01 20 0 true |  |
| 25 | 2.2.3 Modelo de datos y diccionario de datos, con la trazabilidad por lote | 2027-03-01 | 2027-03-29 | 20 | 20 | 24 | 25 2.2.3 Modelo de datos y diccionario de datos, con la trazabilidad por lote #4472c4 false 2027-03-01 20 0 true |  |
| 26 | 2.3.1 Plan de seguridad de la información | 2027-03-01 | 2027-03-29 | 20 | 20 | 25 | 26 2.3.1 Plan de seguridad de la información #4472c4 false 2027-03-01 20 0 true |  |
| 27 | 2.3.4 Matriz de clasificación de la información y matriz de controles | 2027-03-01 | 2027-03-29 | 20 | 20 | 26 | 27 2.3.4 Matriz de clasificación de la información y matriz de controles #4472c4 false 2027-03-01 20 0 true |  |
| 28 | 2.6.1 Informe de investigación con usuarios de terreno | 2027-03-01 | 2027-03-29 | 20 | 20 | 27 | 28 2.6.1 Informe de investigación con usuarios de terreno #4472c4 false 2027-03-01 20 0 true |  |
| 29 | 7.2.1 Innovación 2: informe de medición inicial y contrato de evidencia (INN-02.P1) | 2027-03-01 | 2027-04-20 | 36 | 36 | 28 | 29 7.2.1 Innovación 2: informe de medición inicial y contrato de evidencia (INN-02.P1) #4472c4 false 2027-03-01 36 0 true |  |
| 30 | 8.1.1 Especificación de compra de equipos de uso para el CLIENTE | 2027-03-01 | 2027-03-09 | 7 | 7 | 29 | 30 8.1.1 Especificación de compra de equipos de uso para el CLIENTE #4472c4 false 2027-03-01 7 0 true |  |
| 31 | 8.2.1 Contrato de los servicios de AWS | 2027-03-01 | 2027-03-09 | 7 | 7 | 30 | 31 8.2.1 Contrato de los servicios de AWS #4472c4 false 2027-03-01 7 0 true |  |
| 32 | 8.2.7 Contrato de SIM M2M y servicio satelital de los camiones con frío | 2027-03-01 | 2027-03-12 | 10 | 10 | 31 | 32 8.2.7 Contrato de SIM M2M y servicio satelital de los camiones con frío #4472c4 false 2027-03-01 10 0 true |  |
| 33 | 9.6.3 Diagnóstico del impacto organizacional por área y perfil, con agentes de cambio | 2027-03-01 | 2027-05-25 | 60 | 60 | 32 | 33 9.6.3 Diagnóstico del impacto organizacional por área y perfil, con agentes de cambio #4472c4 false 2027-03-01 60 0 true |  |
| 34 | 2.4.3 Plano de los gabinetes de borde de Concepción y de las plataformas de cross-docking | 2027-03-02 | 2027-03-29 | 19 | 19 | 33 | 34 2.4.3 Plano de los gabinetes de borde de Concepción y de las plataformas de cross-docking #4472c4 false 2027-03-02 19 0 true |  |
| 35 | 8.1.2 Especificación y compra de la sala técnica, los racks, los servidores y los gabinetes de borde | 2027-03-02 | 2027-03-10 | 7 | 7 | 34 | 35 8.1.2 Especificación y compra de la sala técnica, los racks, los servidores y los gabinetes de borde #4472c4 false 2027-03-02 7 0 true |  |
| 36 | H1 · Entrega de expediente | 2027-03-09 | 2027-03-09 | 0 | 0 | 35 | 36 H1 · Entrega de expediente #404040 true 2027-03-09 0 0 true | True |
| 37 | H1 · Revisión de la Contraparte (10 días hábiles) | 2027-03-10 | 2027-03-23 | 10 | 10 | 36 | 37 H1 · Revisión de la Contraparte (10 días hábiles) #4472c4 false 2027-03-10 10 0 true |  |
| 38 | H1 · Firma del acta | 2027-03-23 | 2027-03-23 | 0 | 0 | 37 | 38 H1 · Firma del acta #404040 true 2027-03-23 0 0 true | True |
| 39 | 1.6.1 Plan de Reversibilidad inicial | 2027-04-01 | 2027-04-09 | 7 | 7 | 38 | 39 1.6.1 Plan de Reversibilidad inicial #4472c4 false 2027-04-01 7 0 true |  |
| 40 | 2.3.3 Plan de respuesta a incidentes de seguridad | 2027-04-01 | 2027-04-16 | 12 | 12 | 39 | 40 2.3.3 Plan de respuesta a incidentes de seguridad #4472c4 false 2027-04-01 12 0 true |  |
| 41 | 2.5.1 Plan de continuidad del negocio (ISO 22301) y análisis de impacto | 2027-04-01 | 2027-04-29 | 21 | 21 | 40 | 41 2.5.1 Plan de continuidad del negocio (ISO 22301) y análisis de impacto #4472c4 false 2027-04-01 21 0 true |  |
| 42 | 2.5.2 Plan de continuidad TIC según ISO/IEC 27031 y plan de recuperación ante desastres | 2027-04-01 | 2027-04-29 | 21 | 21 | 41 | 42 2.5.2 Plan de continuidad TIC según ISO/IEC 27031 y plan de recuperación ante desastres #4472c4 false 2027-04-01 21 0 true |  |
| 43 | 2.6.2 Prototipos y pruebas de usabilidad con participantes del CLIENTE | 2027-04-01 | 2027-04-29 | 21 | 21 | 42 | 43 2.6.2 Prototipos y pruebas de usabilidad con participantes del CLIENTE #4472c4 false 2027-04-01 21 0 true |  |
| 44 | 2.7.1 Informe de validación del kit de cadena de frío en banco de pruebas | 2027-04-01 | 2027-04-30 | 22 | 22 | 43 | 44 2.7.1 Informe de validación del kit de cadena de frío en banco de pruebas #c00000 false 2027-04-01 22 0 true |  |
| 45 | 7.2.2 Innovación 2: circuito mínimo de reproducción en la preventa (INN-02.P2) | 2027-04-01 | 2027-06-09 | 49 | 49 | 44 | 45 7.2.2 Innovación 2: circuito mínimo de reproducción en la preventa (INN-02.P2) #4472c4 false 2027-04-01 49 0 true |  |
| 46 | 7.3.1 Innovación 3: documento de familias priorizadas y parámetros aprobados (INN-03.P1) | 2027-04-01 | 2027-06-09 | 49 | 49 | 45 | 46 7.3.1 Innovación 3: documento de familias priorizadas y parámetros aprobados (INN-03.P1) #4472c4 false 2027-04-01 49 0 true |  |
| 47 | 8.3.1 Piso técnico de la sala y recepción de obra civil de separación (RT-06.06) | 2027-04-01 | 2027-04-20 | 14 | 14 | 46 | 47 8.3.1 Piso técnico de la sala y recepción de obra civil de separación (RT-06.06) #4472c4 false 2027-04-01 14 0 true |  |
| 48 | 8.3.2 Sistema de energía de la sala instalado (UPS N+1, generador y PDU) | 2027-04-01 | 2027-04-20 | 14 | 14 | 47 | 48 8.3.2 Sistema de energía de la sala instalado (UPS N+1, generador y PDU) #4472c4 false 2027-04-01 14 0 true |  |
| 49 | 8.3.3 Hardware de climatización de precisión N+1 instalado | 2027-04-01 | 2027-04-20 | 14 | 14 | 48 | 49 8.3.3 Hardware de climatización de precisión N+1 instalado #4472c4 false 2027-04-01 14 0 true |  |
| 50 | 8.3.4 Hardware de detección temprana de incendio y extinción por agente limpio instalado | 2027-04-01 | 2027-04-20 | 14 | 14 | 49 | 50 8.3.4 Hardware de detección temprana de incendio y extinción por agente limpio instalado #4472c4 false 2027-04-01 14 0 true |  |
| 51 | 2.8.1 Acta de aprobación de la arquitectura, el plan de seguridad y el modelo de datos (H2) | 2027-04-19 | 2027-04-29 | 9 | 9 | 50 | 51 2.8.1 Acta de aprobación de la arquitectura, el plan de seguridad y el modelo de datos (H2) #4472c4 false 2027-04-19 9 0 true |  |
| 288 | 7.2.1 · Fin de referencia para la precedencia | 2027-04-20 | 2027-04-20 | 0 | 0 | 51 | 288 7.2.1 · Fin de referencia para la precedencia #404040 true 2027-04-20 0 0 true | True |
| 52 | H2 · Entrega de expediente | 2027-04-26 | 2027-04-26 | 0 | 0 | 52 | 52 H2 · Entrega de expediente #404040 true 2027-04-26 0 0 true | True |
| 53 | H2 · Evidencia disponible (2.8.1) | 2027-04-26 | 2027-04-26 | 0 | 0 | 53 | 53 H2 · Evidencia disponible (2.8.1) #404040 true 2027-04-26 0 0 true | True |
| 54 | H2 · Revisión de la Contraparte (10 días hábiles) | 2027-04-27 | 2027-05-10 | 10 | 10 | 54 | 54 H2 · Revisión de la Contraparte (10 días hábiles) #4472c4 false 2027-04-27 10 0 true |  |
| 55 | 2.8.1 · Cierre del paquete | 2027-04-29 | 2027-04-29 | 0 | 0 | 55 | 55 2.8.1 · Cierre del paquete #404040 true 2027-04-29 0 0 true | True |
| 56 | 2.6.3 Indicadores de usabilidad comprometidos por transacción crítica | 2027-05-03 | 2027-05-31 | 20 | 20 | 56 | 56 2.6.3 Indicadores de usabilidad comprometidos por transacción crítica #c00000 false 2027-05-03 20 0 true |  |
| 57 | 2.7.2 Mapeo térmico por tipo de carrocería | 2027-05-03 | 2027-05-28 | 19 | 19 | 57 | 57 2.7.2 Mapeo térmico por tipo de carrocería #4472c4 false 2027-05-03 19 0 true |  |
| 58 | 3.1.4 Cadena de integración y entrega continua, e infraestructura como código | 2027-05-03 | 2027-05-31 | 20 | 20 | 58 | 58 3.1.4 Cadena de integración y entrega continua, e infraestructura como código #c00000 false 2027-05-03 20 0 true |  |
| 59 | 3.2.1 Servicio de nube para la aplicación y los portales | 2027-05-03 | 2027-05-31 | 20 | 20 | 59 | 59 3.2.1 Servicio de nube para la aplicación y los portales #c00000 false 2027-05-03 20 0 true |  |
| 60 | 3.2.2 Servicio de nube de base de datos, caché y mensajería | 2027-05-03 | 2027-05-31 | 20 | 20 | 60 | 60 3.2.2 Servicio de nube de base de datos, caché y mensajería #c00000 false 2027-05-03 20 0 true |  |
| 61 | 3.2.3 Servicio de nube de ingesta de IoT, telemetría cruda y plataforma analítica | 2027-05-03 | 2027-05-31 | 20 | 20 | 61 | 61 3.2.3 Servicio de nube de ingesta de IoT, telemetría cruda y plataforma analítica #c00000 false 2027-05-03 20 0 true |  |
| 62 | 3.2.4 Servicio de nube de respaldo inmutable y réplica entre regiones | 2027-05-03 | 2027-05-31 | 20 | 20 | 62 | 62 3.2.4 Servicio de nube de respaldo inmutable y réplica entre regiones #c00000 false 2027-05-03 20 0 true |  |
| 63 | 3.2.5 Servicio de nube de seguridad y gobierno, y detección en endpoints | 2027-05-03 | 2027-05-31 | 20 | 20 | 63 | 63 3.2.5 Servicio de nube de seguridad y gobierno, y detección en endpoints #c00000 false 2027-05-03 20 0 true |  |
| 64 | 8.2.2 Suscripción del servicio de gestión de dispositivos y de detección en endpoints | 2027-05-03 | 2027-05-11 | 7 | 7 | 64 | 64 8.2.2 Suscripción del servicio de gestión de dispositivos y de detección en endpoints #4472c4 false 2027-05-03 7 0 true |  |
| 65 | 8.2.4 Contrato de fibra óptica de los CD de Talca y Concepción | 2027-05-03 | 2027-05-11 | 7 | 7 | 65 | 65 8.2.4 Contrato de fibra óptica de los CD de Talca y Concepción #4472c4 false 2027-05-03 7 0 true |  |
| 66 | 8.2.5 Contrato de planes LTE con dos proveedores (ocho planes) | 2027-05-03 | 2027-05-11 | 7 | 7 | 66 | 66 8.2.5 Contrato de planes LTE con dos proveedores (ocho planes) #4472c4 false 2027-05-03 7 0 true |  |
| 67 | 8.2.6 Contrato de Starlink para los cinco sitios | 2027-05-03 | 2027-05-11 | 7 | 7 | 67 | 67 8.2.6 Contrato de Starlink para los cinco sitios #4472c4 false 2027-05-03 7 0 true |  |
| 68 | 8.3.5 Acta de recepción técnica de la sala | 2027-05-03 | 2027-05-20 | 14 | 14 | 68 | 68 8.3.5 Acta de recepción técnica de la sala #c00000 false 2027-05-03 14 0 true |  |
| 69 | 8.4.1 Cableado de cobre Cat6A y fibra OM4 tendido, con dos ductos de ingreso independientes | 2027-05-03 | 2027-05-20 | 14 | 14 | 69 | 69 8.4.1 Cableado de cobre Cat6A y fibra OM4 tendido, con dos ductos de ingreso independientes #4472c4 false 2027-05-03 14 0 true |  |

| id | name | start | end | duration | duration_gantt | order | attributes | milestone |
| --- | --- | --- | --- | --- | --- | --- | --- | --- |
| 70 | 8.4.6 Gabinete de borde de Concepción montado | 2027-05-03 | 2027-05-20 | 14 | 14 | 70 | 70 8.4.6 Gabinete de borde de Concepción montado #4472c4 false 2027-05-03 14 0 true |  |
| 71 | H2 · Firma del acta | 2027-05-10 | 2027-05-10 | 0 | 0 | 71 | 71 H2 · Firma del acta #404040 true 2027-05-10 0 0 true | True |
| 72 | 8.2.3 Licencias de software de terceros constituidas a nombre del CLIENTE | 2027-05-11 | 2027-05-19 | 7 | 7 | 72 | 72 8.2.3 Licencias de software de terceros constituidas a nombre del CLIENTE #4472c4 false 2027-05-11 7 0 true |  |
| 73 | 3.1.4 · Habilitación de la cadena para QA | 2027-05-12 | 2027-05-12 | 0 | 0 | 73 | 73 3.1.4 · Habilitación de la cadena para QA #404040 true 2027-05-12 0 0 true | True |
| 74 | 8.4.4 Rack R01 de servidores montado y traslado del servidor ERP | 2027-05-24 | 2027-07-12 | 34 | 35 | 74 | 74 8.4.4 Rack R01 de servidores montado y traslado del servidor ERP #4472c4 false 2027-05-24 35 0 true |  |
| 75 | 8.4.5 Rack R02 de comunicaciones montado | 2027-05-24 | 2027-06-09 | 13 | 13 | 75 | 75 8.4.5 Rack R02 de comunicaciones montado #c00000 false 2027-05-24 13 0 true |  |
| 76 | 3.1.4 · Cierre del paquete | 2027-05-31 | 2027-05-31 | 0 | 0 | 76 | 76 3.1.4 · Cierre del paquete #404040 true 2027-05-31 0 0 true | True |
| 77 | 3.1.1 Ambientes de Desarrollo y QA en la nube (H3) | 2027-06-01 | 2027-06-18 | 14 | 14 | 77 | 77 3.1.1 Ambientes de Desarrollo y QA en la nube (H3) #4472c4 false 2027-06-01 14 0 true |  |
| 78 | 3.1.2 Ambientes de Preproducción y Producción en la nube (H3) | 2027-06-01 | 2027-06-18 | 14 | 14 | 78 | 78 3.1.2 Ambientes de Preproducción y Producción en la nube (H3) #4472c4 false 2027-06-01 14 0 true |  |
| 79 | 3.1.3 Ambiente de recuperación ante desastres en la región secundaria (H3) | 2027-06-01 | 2027-06-18 | 14 | 14 | 79 | 79 3.1.3 Ambiente de recuperación ante desastres en la región secundaria (H3) #4472c4 false 2027-06-01 14 0 true |  |
| 80 | 3.1.5 Observabilidad de los doce módulos y de los sitios, con tableros para el CLIENTE (H3) | 2027-06-01 | 2027-06-18 | 14 | 14 | 80 | 80 3.1.5 Observabilidad de los doce módulos y de los sitios, con tableros para el CLIENTE (H3) #4472c4 false 2027-06-01 14 0 true |  |
| 81 | 3.2.6 Servicio de gestión de dispositivos móviles | 2027-06-01 | 2027-06-29 | 19 | 19 | 81 | 81 3.2.6 Servicio de gestión de dispositivos móviles #4472c4 false 2027-06-01 19 0 true |  |
| 82 | 3.3.1 Identidad y control de acceso (incluidos conductores externos) | 2027-06-01 | 2027-08-05 | 45 | 46 | 82 | 82 3.3.1 Identidad y control de acceso (incluidos conductores externos) #4472c4 false 2027-06-01 46 0 true |  |
| 83 | 3.3.2 Registro auditable de stock, lotes y cobros | 2027-06-01 | 2027-08-03 | 43 | 44 | 83 | 83 3.3.2 Registro auditable de stock, lotes y cobros #4472c4 false 2027-06-01 44 0 true |  |
| 84 | 5.1.1 Integración con el ERP como único emisor de la guía de despacho (INT-06 e INT-07) | 2027-06-01 | 2027-07-01 | 21 | 21 | 84 | 84 5.1.1 Integración con el ERP como único emisor de la guía de despacho (INT-06 e INT-07) #4472c4 false 2027-06-01 21 0 true |  |
| 85 | 5.1.2 Mecanismo de convivencia con el WMS de 2013 | 2027-06-01 | 2027-07-07 | 25 | 25 | 85 | 85 5.1.2 Mecanismo de convivencia con el WMS de 2013 #4472c4 false 2027-06-01 25 0 true |  |
| 86 | 7.2.3 Innovación 2: captura de evidencia en las aplicaciones de preventa, preparación y reparto (INN-02.P3) | 2027-06-01 | 2027-10-08 | 90 | 91 | 86 | 86 7.2.3 Innovación 2: captura de evidencia en las aplicaciones de preventa, preparación y reparto (INN-02.P3) #4472c4 false 2027-06-01 91 0 true |  |
| 87 | 8.1.3 Actas de recepción técnica de equipamiento de terreno e infraestructura | 2027-06-01 | 2027-06-09 | 7 | 7 | 87 | 87 8.1.3 Actas de recepción técnica de equipamiento de terreno e infraestructura #4472c4 false 2027-06-01 7 0 true |  |
| 88 | 8.5.1 Hardware de control de acceso biométrico y esclusa instalado | 2027-06-01 | 2027-06-18 | 14 | 14 | 88 | 88 8.5.1 Hardware de control de acceso biométrico y esclusa instalado #4472c4 false 2027-06-01 14 0 true |  |
| 89 | 3.3.3 Operación sin conexión: 14 horas en terreno y 24 horas en el CD | 2027-06-07 | 2027-08-03 | 39 | 40 | 89 | 89 3.3.3 Operación sin conexión: 14 horas en terreno y 24 horas en el CD #4472c4 false 2027-06-07 40 0 true |  |
| 90 | 7.3.2 Innovación 3: asociación lote–sensor en el borde y en el camión (INN-03.P2) | 2027-06-07 | 2027-09-20 | 72 | 73 | 90 | 90 7.3.2 Innovación 3: asociación lote–sensor en el borde y en el camión (INN-03.P2) #4472c4 false 2027-06-07 73 0 true |  |
| 91 | 8.5.2 Hardware de videovigilancia instalado | 2027-06-07 | 2027-06-24 | 13 | 13 | 91 | 91 8.5.2 Hardware de videovigilancia instalado #4472c4 false 2027-06-07 13 0 true |  |
| 289 | 7.2.2 · Fin de referencia para la precedencia | 2027-06-09 | 2027-06-09 | 0 | 0 | 92 | 289 7.2.2 · Fin de referencia para la precedencia #404040 true 2027-06-09 0 0 true | True |
| 290 | 7.3.1 · Fin de referencia para la precedencia | 2027-06-09 | 2027-06-09 | 0 | 0 | 93 | 290 7.3.1 · Fin de referencia para la precedencia #404040 true 2027-06-09 0 0 true | True |
| 92 | 8.4.4 · Rack R01 montado | 2027-06-09 | 2027-06-09 | 0 | 0 | 94 | 92 8.4.4 · Rack R01 montado #404040 true 2027-06-09 0 0 true | True |
| 93 | 4.1.1 Recepción de mercadería con captura de lote y vencimiento (M1 Recepción) | 2027-06-10 | 2027-08-05 | 38 | 39 | 95 | 93 4.1.1 Recepción de mercadería con captura de lote y vencimiento (M1 Recepción) #4472c4 false 2027-06-10 39 0 true |  |
| 94 | 4.1.2 Inventario por ubicación y lote, con FEFO y conteo cíclico (M2 Inventario) | 2027-06-10 | 2027-07-29 | 33 | 34 | 96 | 94 4.1.2 Inventario por ubicación y lote, con FEFO y conteo cíclico (M2 Inventario) #4472c4 false 2027-06-10 34 0 true |  |
| 95 | 4.3.1 Aplicación móvil de preventa sin conexión, con stock y crédito (M3 Preventa) | 2027-06-10 | 2027-08-04 | 37 | 38 | 97 | 95 4.3.1 Aplicación móvil de preventa sin conexión, con stock y crédito (M3 Preventa) #4472c4 false 2027-06-10 38 0 true |  |
| 96 | 5.1.3 Integración con la telemetría de los 42 camiones propios (INT-15) | 2027-06-10 | 2027-07-12 | 21 | 22 | 98 | 96 5.1.3 Integración con la telemetría de los 42 camiones propios (INT-15) #4472c4 false 2027-06-10 22 0 true |  |
| 97 | 8.7.1 Software de base instalado en los cinco sitios | 2027-06-10 | 2027-06-30 | 13 | 13 | 99 | 97 8.7.1 Software de base instalado en los cinco sitios #c00000 false 2027-06-10 13 0 true |  |
| 98 | 8.7.2 Enlaces de fibra, LTE y Starlink habilitados, con conmutación al respaldo | 2027-06-10 | 2027-06-30 | 13 | 13 | 100 | 98 8.7.2 Enlaces de fibra, LTE y Starlink habilitados, con conmutación al respaldo #c00000 false 2027-06-10 13 0 true |  |
| 99 | 8.7.3 Borde de los CD en servicio, con la prueba de autonomía de 24 horas aprobada | 2027-06-10 | 2027-06-18 | 7 | 7 | 101 | 99 8.7.3 Borde de los CD en servicio, con la prueba de autonomía de 24 horas aprobada #4472c4 false 2027-06-10 7 0 true |  |
| 100 | 4.1.2 → 4.1.3 · Contrato de interfaz disponible | 2027-06-16 | 2027-06-16 | 0 | 0 | 102 | 100 4.1.2 → 4.1.3 · Contrato de interfaz disponible #404040 true 2027-06-16 0 0 true | True |
| 101 | 4.1.2 → 4.2.1 · Contrato de interfaz disponible | 2027-06-16 | 2027-06-16 | 0 | 0 | 103 | 101 4.1.2 → 4.2.1 · Contrato de interfaz disponible #404040 true 2027-06-16 0 0 true | True |
| 102 | 4.3.1 → 4.3.2 · Contrato de interfaz disponible | 2027-06-16 | 2027-06-16 | 0 | 0 | 104 | 102 4.3.1 → 4.3.2 · Contrato de interfaz disponible #404040 true 2027-06-16 0 0 true | True |
| 103 | 4.3.1 → 4.3.3 · Contrato de interfaz disponible | 2027-06-16 | 2027-06-16 | 0 | 0 | 105 | 103 4.3.1 → 4.3.3 · Contrato de interfaz disponible #404040 true 2027-06-16 0 0 true | True |
| 104 | 4.1.3 Preparación de pedidos en el turno de noche y en la cámara de congelado (M5 Preparación) | 2027-06-18 | 2027-08-05 | 32 | 33 | 106 | 104 4.1.3 Preparación de pedidos en el turno de noche y en la cámara de congelado (M5 Preparación) #4472c4 false 2027-06-18 33 0 true |  |
| 105 | 4.2.1 Cadena de frío, retención por SSCC y retiro sanitario (M9 Calidad y trazabilidad) | 2027-06-18 | 2027-08-24 | 45 | 46 | 107 | 105 4.2.1 Cadena de frío, retención por SSCC y retiro sanitario (M9 Calidad y trazabilidad) #4472c4 false 2027-06-18 46 0 true |  |
| 106 | 4.2.2 Ingesta de temperatura (M9) y posición de flota (M12) | 2027-06-18 | 2027-08-16 | 39 | 40 | 108 | 106 4.2.2 Ingesta de temperatura (M9) y posición de flota (M12) #4472c4 false 2027-06-18 40 0 true |  |
| 107 | 4.1.1 → 4.1.3 · Contrato de interfaz disponible | 2027-06-18 | 2027-06-18 | 0 | 0 | 109 | 107 4.1.1 → 4.1.3 · Contrato de interfaz disponible #404040 true 2027-06-18 0 0 true | True |
| 108 | 4.1.1 → 4.2.1 · Contrato de interfaz disponible | 2027-06-18 | 2027-06-18 | 0 | 0 | 110 | 108 4.1.1 → 4.2.1 · Contrato de interfaz disponible #404040 true 2027-06-18 0 0 true | True |
| 109 | 8.5.3 Recinto de custodia de respaldos habilitado | 2027-06-22 | 2027-07-09 | 13 | 13 | 111 | 109 8.5.3 Recinto de custodia de respaldos habilitado #4472c4 false 2027-06-22 13 0 true |  |
| 110 | H3 · Entrega de expediente | 2027-06-22 | 2027-06-22 | 0 | 0 | 112 | 110 H3 · Entrega de expediente #404040 true 2027-06-22 0 0 true | True |
| 111 | H3 · Revisión de la Contraparte (10 días hábiles) | 2027-06-23 | 2027-07-07 | 10 | 10 | 113 | 111 H3 · Revisión de la Contraparte (10 días hábiles) #4472c4 false 2027-06-23 10 0 true |  |
| 112 | 4.1.3 → 4.3.2 · Contrato de interfaz disponible | 2027-06-25 | 2027-06-25 | 0 | 0 | 114 | 112 4.1.3 → 4.3.2 · Contrato de interfaz disponible #404040 true 2027-06-25 0 0 true | True |
| 113 | 4.1.3 → 4.3.3 · Contrato de interfaz disponible | 2027-06-25 | 2027-06-25 | 0 | 0 | 115 | 113 4.1.3 → 4.3.3 · Contrato de interfaz disponible #404040 true 2027-06-25 0 0 true | True |
| 114 | 4.1.3 · Construcción dependiente de 4.1.1 | 2027-06-29 | 2027-06-29 | 0 | 0 | 116 | 114 4.1.3 · Construcción dependiente de 4.1.1 #404040 true 2027-06-29 0 0 true | True |
| 115 | 4.2.1 · Construcción dependiente de 4.1.1 | 2027-06-29 | 2027-06-29 | 0 | 0 | 117 | 115 4.2.1 · Construcción dependiente de 4.1.1 #404040 true 2027-06-29 0 0 true | True |
| 116 | 4.1.3 · Construcción dependiente de 4.1.2 | 2027-06-29 | 2027-06-29 | 0 | 0 | 118 | 116 4.1.3 · Construcción dependiente de 4.1.2 #404040 true 2027-06-29 0 0 true | True |
| 117 | 4.2.1 · Construcción dependiente de 4.1.2 | 2027-06-29 | 2027-06-29 | 0 | 0 | 119 | 117 4.2.1 · Construcción dependiente de 4.1.2 #404040 true 2027-06-29 0 0 true | True |
| 118 | 5.2.2 Integración con la pasarela de pago para el cobro con tarjeta (INT-09) | 2027-07-01 | 2027-08-02 | 22 | 23 | 120 | 118 5.2.2 Integración con la pasarela de pago para el cobro con tarjeta (INT-09) #4472c4 false 2027-07-01 23 0 true |  |
| 119 | 8.4.2 Certificación de enlaces, etiquetado y planos as-built | 2027-07-01 | 2027-07-20 | 13 | 14 | 121 | 119 8.4.2 Certificación de enlaces, etiquetado y planos as-built #4472c4 false 2027-07-01 14 0 true |  |
| 120 | H3 · Firma del acta | 2027-07-07 | 2027-07-07 | 0 | 0 | 122 | 120 H3 · Firma del acta #404040 true 2027-07-07 0 0 true | True |
| 121 | 8.4.4 · Traslado dominical del ERP a R01 | 2027-07-11 | 2027-07-11 | 0 | 0 | 123 | 121 8.4.4 · Traslado dominical del ERP a R01 #404040 true 2027-07-11 0 0 true | True |
| 122 | 8.4.4 · Cierre del paquete | 2027-07-12 | 2027-07-12 | 0 | 0 | 124 | 122 8.4.4 · Cierre del paquete #404040 true 2027-07-12 0 0 true | True |
| 123 | 5.2.4 Integración con el servicio de avisos al cliente (INT-11) | 2027-07-20 | 2027-08-16 | 20 | 20 | 125 | 123 5.2.4 Integración con el servicio de avisos al cliente (INT-11) #4472c4 false 2027-07-20 20 0 true |  |
| 124 | 4.1.2 · Cierre del paquete | 2027-07-29 | 2027-07-29 | 0 | 0 | 126 | 124 4.1.2 · Cierre del paquete #404040 true 2027-07-29 0 0 true | True |
| 125 | 4.1.2 → 4.1.3 · Incremento para integración | 2027-07-29 | 2027-07-29 | 0 | 0 | 127 | 125 4.1.2 → 4.1.3 · Incremento para integración #404040 true 2027-07-29 0 0 true | True |
| 126 | 4.1.2 → 4.2.1 · Incremento para integración | 2027-07-29 | 2027-07-29 | 0 | 0 | 128 | 126 4.1.2 → 4.2.1 · Incremento para integración #404040 true 2027-07-29 0 0 true | True |
| 127 | 4.3.4 Devoluciones en terreno y control de envases (M8 Devoluciones y envases) | 2027-07-30 | 2027-09-15 | 34 | 34 | 129 | 127 4.3.4 Devoluciones en terreno y control de envases (M8 Devoluciones y envases) #4472c4 false 2027-07-30 34 0 true |  |
| 128 | 5.2.1 Intercambio de lote y trazabilidad con los proveedores | 2027-08-02 | 2027-09-01 | 23 | 23 | 130 | 128 5.2.1 Intercambio de lote y trazabilidad con los proveedores #4472c4 false 2027-08-02 23 0 true |  |
| 129 | 6.8.7 Contrato de custodia de fuentes con un tercero independiente | 2027-08-02 | 2027-08-10 | 7 | 7 | 131 | 129 6.8.7 Contrato de custodia de fuentes con un tercero independiente #4472c4 false 2027-08-02 7 0 true |  |
| 130 | 7.1.1 Innovación 1: documento de catálogo de acciones y protocolo del piloto (INN-01.P1) | 2027-08-02 | 2027-10-08 | 49 | 49 | 132 | 130 7.1.1 Innovación 1: documento de catálogo de acciones y protocolo del piloto (INN-01.P1) #4472c4 false 2027-08-02 49 0 true |  |
| 131 | 8.4.3 Gabinetes de piso y switches de acceso instalados en las bodegas de Talca y Concepción | 2027-08-02 | 2027-08-19 | 14 | 14 | 133 | 131 8.4.3 Gabinetes de piso y switches de acceso instalados en las bodegas de Talca y Concepción #4472c4 false 2027-08-02 14 0 true |  |
| 132 | 4.1.1 → 4.1.3 · Incremento para integración | 2027-08-02 | 2027-08-02 | 0 | 0 | 134 | 132 4.1.1 → 4.1.3 · Incremento para integración #404040 true 2027-08-02 0 0 true | True |
| 133 | 4.1.3 · Integración con 4.1.1 | 2027-08-03 | 2027-08-03 | 0 | 0 | 135 | 133 4.1.3 · Integración con 4.1.1 #404040 true 2027-08-03 0 0 true | True |
| 134 | 4.1.3 · Integración con 4.1.2 | 2027-08-03 | 2027-08-03 | 0 | 0 | 136 | 134 4.1.3 · Integración con 4.1.2 #404040 true 2027-08-03 0 0 true | True |
| 135 | 5.4.1 Informe de perfilamiento y datos saneados | 2027-08-04 | 2027-10-01 | 42 | 42 | 137 | 135 5.4.1 Informe de perfilamiento y datos saneados #4472c4 false 2027-08-04 42 0 true |  |
| 136 | 4.3.1 · Cierre del paquete | 2027-08-04 | 2027-08-04 | 0 | 0 | 138 | 136 4.3.1 · Cierre del paquete #404040 true 2027-08-04 0 0 true | True |
| 137 | 4.3.1 → 4.3.2 · Incremento para integración | 2027-08-04 | 2027-08-04 | 0 | 0 | 139 | 137 4.3.1 → 4.3.2 · Incremento para integración #404040 true 2027-08-04 0 0 true | True |

| id | name | start | end | duration | duration_gantt | order | attributes | milestone |
| --- | --- | --- | --- | --- | --- | --- | --- | --- |
| 138 | 4.3.1 → 4.3.3 · Incremento para integración | 2027-08-04 | 2027-08-04 | 0 | 0 | 140 | 138 4.3.1 → 4.3.3 · Incremento para integración #404040 true 2027-08-04 0 0 true | True |
| 139 | 4.3.3 Aplicación móvil de reparto con prueba de entrega digital (M6 Reparto) | 2027-08-05 | 2027-09-27 | 37 | 37 | 141 | 139 4.3.3 Aplicación móvil de reparto con prueba de entrega digital (M6 Reparto) #4472c4 false 2027-08-05 37 0 true |  |
| 140 | 4.1.1 · Cierre del paquete | 2027-08-05 | 2027-08-05 | 0 | 0 | 142 | 140 4.1.1 · Cierre del paquete #404040 true 2027-08-05 0 0 true | True |
| 141 | 4.1.3 · Cierre del paquete | 2027-08-05 | 2027-08-05 | 0 | 0 | 143 | 141 4.1.3 · Cierre del paquete #404040 true 2027-08-05 0 0 true | True |
| 142 | 4.1.1 → 4.2.1 · Incremento para integración | 2027-08-05 | 2027-08-05 | 0 | 0 | 144 | 142 4.1.1 → 4.2.1 · Incremento para integración #404040 true 2027-08-05 0 0 true | True |
| 143 | 4.1.3 → 4.3.2 · Incremento para integración | 2027-08-05 | 2027-08-05 | 0 | 0 | 145 | 143 4.1.3 → 4.3.2 · Incremento para integración #404040 true 2027-08-05 0 0 true | True |
| 144 | 4.1.3 → 4.3.3 · Incremento para integración | 2027-08-05 | 2027-08-05 | 0 | 0 | 146 | 144 4.1.3 → 4.3.3 · Incremento para integración #404040 true 2027-08-05 0 0 true | True |
| 145 | 4.3.2 Planificación de rutas corregible por el planificador (M4 Rutas) | 2027-08-06 | 2027-09-20 | 31 | 31 | 147 | 145 4.3.2 Planificación de rutas corregible por el planificador (M4 Rutas) #4472c4 false 2027-08-06 31 0 true |  |
| 146 | 4.3.3 → 4.3.5 · Contrato de interfaz disponible | 2027-08-10 | 2027-08-10 | 0 | 0 | 148 | 146 4.3.3 → 4.3.5 · Contrato de interfaz disponible #404040 true 2027-08-10 0 0 true | True |
| 147 | 4.3.5 Cobro en ruta, rendición y conciliación (M7 Cobranza y rendición) | 2027-08-11 | 2027-09-30 | 36 | 36 | 149 | 147 4.3.5 Cobro en ruta, rendición y conciliación (M7 Cobranza y rendición) #c00000 false 2027-08-11 36 0 true |  |
| 148 | 4.3.3 · Construcción dependiente de 4.1.3 | 2027-08-11 | 2027-08-11 | 0 | 0 | 150 | 148 4.3.3 · Construcción dependiente de 4.1.3 #404040 true 2027-08-11 0 0 true | True |
| 149 | 4.3.3 · Construcción dependiente de 4.3.1 | 2027-08-11 | 2027-08-11 | 0 | 0 | 151 | 149 4.3.3 · Construcción dependiente de 4.3.1 #404040 true 2027-08-11 0 0 true | True |
| 150 | 4.3.2 · Construcción dependiente de 4.1.3 | 2027-08-13 | 2027-08-13 | 0 | 0 | 152 | 150 4.3.2 · Construcción dependiente de 4.1.3 #404040 true 2027-08-13 0 0 true | True |
| 151 | 4.3.2 · Construcción dependiente de 4.3.1 | 2027-08-13 | 2027-08-13 | 0 | 0 | 153 | 151 4.3.2 · Construcción dependiente de 4.3.1 #404040 true 2027-08-13 0 0 true | True |
| 152 | 5.2.3 Integración con el servicio de mapas y geocodificación (INT-10) | 2027-08-16 | 2027-09-10 | 20 | 20 | 154 | 152 5.2.3 Integración con el servicio de mapas y geocodificación (INT-10) #4472c4 false 2027-08-16 20 0 true |  |
| 153 | 4.3.5 · Construcción dependiente de 4.3.3 | 2027-08-18 | 2027-08-18 | 0 | 0 | 155 | 153 4.3.5 · Construcción dependiente de 4.3.3 #404040 true 2027-08-18 0 0 true | True |
| 154 | 4.2.1 · Integración con 4.1.1 | 2027-08-20 | 2027-08-20 | 0 | 0 | 156 | 154 4.2.1 · Integración con 4.1.1 #404040 true 2027-08-20 0 0 true | True |
| 155 | 4.2.1 · Integración con 4.1.2 | 2027-08-20 | 2027-08-20 | 0 | 0 | 157 | 155 4.2.1 · Integración con 4.1.2 #404040 true 2027-08-20 0 0 true | True |
| 156 | 4.2.1 · Cierre del paquete | 2027-08-24 | 2027-08-24 | 0 | 0 | 158 | 156 4.2.1 · Cierre del paquete #404040 true 2027-08-24 0 0 true | True |
| 157 | 4.5.1 Indicadores operacionales y OTIF diario (M10 Analítica) | 2027-08-25 | 2027-09-29 | 25 | 25 | 159 | 157 4.5.1 Indicadores operacionales y OTIF diario (M10 Analítica) #4472c4 false 2027-08-25 25 0 true |  |
| 158 | 3.3.4 Parametrización y motor de reglas versionados | 2027-09-01 | 2027-09-30 | 21 | 21 | 160 | 158 3.3.4 Parametrización y motor de reglas versionados #c00000 false 2027-09-01 21 0 true |  |
| 159 | 3.3.5 Gestión documental con versionado, búsqueda y vista previa | 2027-09-01 | 2027-09-30 | 21 | 21 | 161 | 159 3.3.5 Gestión documental con versionado, búsqueda y vista previa #c00000 false 2027-09-01 21 0 true |  |
| 160 | 3.3.6 Generación de documentos con plantillas administrables | 2027-09-01 | 2027-09-30 | 21 | 21 | 162 | 160 3.3.6 Generación de documentos con plantillas administrables #c00000 false 2027-09-01 21 0 true |  |
| 161 | 8.6.4 Kit de cadena de frío instalado y recibido en los 28 camiones con frío | 2027-09-01 | 2028-01-14 | 94 | 94 | 163 | 161 8.6.4 Kit de cadena de frío instalado y recibido en los 28 camiones con frío #4472c4 false 2027-09-01 94 0 true |  |
| 162 | 4.3.2 · Integración con 4.1.3 | 2027-09-15 | 2027-09-15 | 0 | 0 | 164 | 162 4.3.2 · Integración con 4.1.3 #404040 true 2027-09-15 0 0 true | True |
| 163 | 4.3.2 · Integración con 4.3.1 | 2027-09-15 | 2027-09-15 | 0 | 0 | 165 | 163 4.3.2 · Integración con 4.3.1 #404040 true 2027-09-15 0 0 true | True |
| 164 | 4.3.2 · Cierre del paquete | 2027-09-20 | 2027-09-20 | 0 | 0 | 166 | 164 4.3.2 · Cierre del paquete #404040 true 2027-09-20 0 0 true | True |
| 165 | 4.3.3 · Integración con 4.1.3 | 2027-09-24 | 2027-09-24 | 0 | 0 | 167 | 165 4.3.3 · Integración con 4.1.3 #404040 true 2027-09-24 0 0 true | True |
| 166 | 4.3.3 · Integración con 4.3.1 | 2027-09-24 | 2027-09-24 | 0 | 0 | 168 | 166 4.3.3 · Integración con 4.3.1 #404040 true 2027-09-24 0 0 true | True |
| 167 | 4.3.3 · Cierre del paquete | 2027-09-27 | 2027-09-27 | 0 | 0 | 169 | 167 4.3.3 · Cierre del paquete #404040 true 2027-09-27 0 0 true | True |
| 168 | 4.3.3 → 4.3.5 · Incremento para integración | 2027-09-27 | 2027-09-27 | 0 | 0 | 170 | 168 4.3.3 → 4.3.5 · Incremento para integración #404040 true 2027-09-27 0 0 true | True |
| 169 | 4.3.5 · Integración con 4.3.3 | 2027-09-28 | 2027-09-28 | 0 | 0 | 171 | 169 4.3.5 · Integración con 4.3.3 #404040 true 2027-09-28 0 0 true | True |
| 170 | 4.3.5 · Cierre del paquete | 2027-09-30 | 2027-09-30 | 0 | 0 | 172 | 170 4.3.5 · Cierre del paquete #404040 true 2027-09-30 0 0 true | True |
| 171 | 8.6.4 · Recepción parcial de cuatro kits | 2027-09-30 | 2027-09-30 | 0 | 0 | 173 | 171 8.6.4 · Recepción parcial de cuatro kits #404040 true 2027-09-30 0 0 true | True |
| 172 | 5.3.1 Intercambio electrónico certificado con la cadena principal (INT-08) | 2027-10-01 | 2028-05-31 | 169 | 171 | 174 | 172 5.3.1 Intercambio electrónico certificado con la cadena principal (INT-08) #c00000 false 2027-10-01 171 0 true |  |
| 173 | 7.1.2 Innovación 1: estimador de saldo y ritmo de reposición (INN-01.P2) | 2027-10-01 | 2027-11-19 | 34 | 34 | 175 | 173 7.1.2 Innovación 1: estimador de saldo y ritmo de reposición (INN-01.P2) #4472c4 false 2027-10-01 34 0 true |  |
| 174 | 7.1.3 Innovación 1: función de lista sin conexión en la aplicación de preventa (INN-01.P3) | 2027-10-01 | 2027-11-19 | 34 | 34 | 176 | 174 7.1.3 Innovación 1: función de lista sin conexión en la aplicación de preventa (INN-01.P3) #4472c4 false 2027-10-01 34 0 true |  |
| 175 | 7.3.3 Innovación 3: vista en M9 y orden de salida sugerido (INN-03.P3) | 2027-10-01 | 2027-11-19 | 34 | 34 | 177 | 175 7.3.3 Innovación 3: vista en M9 y orden de salida sugerido (INN-03.P3) #4472c4 false 2027-10-01 34 0 true |  |
| 176 | 8.4.7 Gabinetes de borde de plataformas de cross-docking montados | 2027-10-01 | 2027-10-20 | 13 | 13 | 178 | 176 8.4.7 Gabinetes de borde de plataformas de cross-docking montados #4472c4 false 2027-10-01 13 0 true |  |
| 177 | 9.7.1 Acuerdos operacionales firmados con los diez transportistas | 2027-10-01 | 2027-10-12 | 7 | 7 | 179 | 177 9.7.1 Acuerdos operacionales firmados con los diez transportistas #4472c4 false 2027-10-01 7 0 true |  |
| 178 | 9.7.2 Acta de acuerdo con el sindicato sobre terminales, GPS y cámaras | 2027-10-01 | 2027-10-12 | 7 | 7 | 180 | 178 9.7.2 Acta de acuerdo con el sindicato sobre terminales, GPS y cámaras #4472c4 false 2027-10-01 7 0 true |  |
| 179 | 5.4.2 Datos maestros cargados: 8.400 SKU, clientes e instalaciones | 2027-10-04 | 2027-11-03 | 21 | 21 | 181 | 179 5.4.2 Datos maestros cargados: 8.400 SKU, clientes e instalaciones #4472c4 false 2027-10-04 21 0 true |  |
| 180 | 6.1.1 Pruebas de integración, regresión e idempotencia en QA (H4) | 2027-10-05 | 2027-10-22 | 13 | 13 | 182 | 180 6.1.1 Pruebas de integración, regresión e idempotencia en QA (H4) #4472c4 false 2027-10-05 13 0 true |  |
| 181 | 8.6.1 Terminales de preventa, reparto y bodega configurados y enrolados | 2027-10-06 | 2028-01-14 | 70 | 70 | 183 | 181 8.6.1 Terminales de preventa, reparto y bodega configurados y enrolados #4472c4 false 2027-10-06 70 0 true |  |
| 182 | 8.6.3 Sensores de cámara y gateways IoT instalados en Talca y Concepción | 2027-10-06 | 2027-11-25 | 35 | 35 | 184 | 182 8.6.3 Sensores de cámara y gateways IoT instalados en Talca y Concepción #4472c4 false 2027-10-06 35 0 true |  |
| 183 | 8.6.6 Impresoras de andén y balanzas de recepción instaladas | 2027-10-06 | 2028-01-14 | 70 | 70 | 185 | 183 8.6.6 Impresoras de andén y balanzas de recepción instaladas #4472c4 false 2027-10-06 70 0 true |  |
| 287 | 7.1.1 · Fin de referencia para la precedencia | 2027-10-08 | 2027-10-08 | 0 | 0 | 186 | 287 7.1.1 · Fin de referencia para la precedencia #404040 true 2027-10-08 0 0 true | True |
| 184 | H4 · Entrega de expediente | 2027-10-20 | 2027-10-20 | 0 | 0 | 187 | 184 H4 · Entrega de expediente #404040 true 2027-10-20 0 0 true | True |
| 185 | H4 · Evidencia disponible (6.1.1) | 2027-10-20 | 2027-10-20 | 0 | 0 | 188 | 185 H4 · Evidencia disponible (6.1.1) #404040 true 2027-10-20 0 0 true | True |
| 186 | H4 · Revisión de la Contraparte (10 días hábiles) | 2027-10-21 | 2027-11-04 | 10 | 10 | 189 | 186 H4 · Revisión de la Contraparte (10 días hábiles) #4472c4 false 2027-10-21 10 0 true |  |
| 187 | 6.1.1 · Cierre del paquete | 2027-10-22 | 2027-10-22 | 0 | 0 | 190 | 187 6.1.1 · Cierre del paquete #404040 true 2027-10-22 0 0 true | True |
| 188 | 6.2.1 Pruebas de aceptación y de accesibilidad con preventistas, conductores y bodega | 2027-10-25 | 2027-11-19 | 19 | 19 | 191 | 188 6.2.1 Pruebas de aceptación y de accesibilidad con preventistas, conductores y bodega #4472c4 false 2027-10-25 19 0 true |  |
| 189 | 6.2.2 Pruebas de operación en condiciones físicas extremas y sin conexión | 2027-10-25 | 2027-11-19 | 19 | 19 | 192 | 189 6.2.2 Pruebas de operación en condiciones físicas extremas y sin conexión #4472c4 false 2027-10-25 19 0 true |  |
| 190 | 6.3.1 Pruebas de carga con el peak de septiembre y de resiliencia | 2027-10-25 | 2027-11-11 | 13 | 13 | 193 | 190 6.3.1 Pruebas de carga con el peak de septiembre y de resiliencia #4472c4 false 2027-10-25 13 0 true |  |
| 191 | 6.4.1 Prueba de recuperación ante desastres con conmutación real | 2027-10-25 | 2027-11-11 | 13 | 13 | 194 | 191 6.4.1 Prueba de recuperación ante desastres con conmutación real #4472c4 false 2027-10-25 13 0 true |  |
| 192 | 6.5.1 Prueba de seguridad ofensiva de la Etapa 1, por un tercero independiente | 2027-10-25 | 2027-11-11 | 13 | 13 | 195 | 192 6.5.1 Prueba de seguridad ofensiva de la Etapa 1, por un tercero independiente #4472c4 false 2027-10-25 13 0 true |  |
| 193 | 6.6.1 Demostración en Preproducción del despliegue sin interrupción de la Etapa 1 | 2027-10-25 | 2027-11-11 | 13 | 13 | 196 | 193 6.6.1 Demostración en Preproducción del despliegue sin interrupción de la Etapa 1 #4472c4 false 2027-10-25 13 0 true |  |
| 194 | 9.1.1 Plan de olas de la Etapa 1 por sitio y zona | 2027-11-02 | 2027-11-10 | 7 | 7 | 197 | 194 9.1.1 Plan de olas de la Etapa 1 por sitio y zona #4472c4 false 2027-11-02 7 0 true |  |
| 195 | 9.5.1 Plan de capacitación por perfil | 2027-11-02 | 2027-12-24 | 38 | 38 | 198 | 195 9.5.1 Plan de capacitación por perfil #4472c4 false 2027-11-02 38 0 true |  |
| 196 | 9.5.6 Plataforma de autoformación en línea con registro de avance | 2027-11-02 | 2027-12-24 | 38 | 38 | 199 | 196 9.5.6 Plataforma de autoformación en línea con registro de avance #4472c4 false 2027-11-02 38 0 true |  |
| 197 | 8.6.2 Terminales de pago configurados, uno por camión | 2027-11-04 | 2028-01-14 | 51 | 51 | 200 | 197 8.6.2 Terminales de pago configurados, uno por camión #4472c4 false 2027-11-04 51 0 true |  |
| 198 | 8.6.5 Impresoras de cabina instaladas | 2027-11-04 | 2028-01-14 | 51 | 51 | 201 | 198 8.6.5 Impresoras de cabina instaladas #4472c4 false 2027-11-04 51 0 true |  |
| 199 | H4 · Firma del acta | 2027-11-04 | 2027-11-04 | 0 | 0 | 202 | 199 H4 · Firma del acta #404040 true 2027-11-04 0 0 true | True |
| 200 | 2.7.3 Informe de piloto de cadena de frío en cuatro camiones | 2027-11-09 | 2027-12-20 | 29 | 29 | 203 | 200 2.7.3 Informe de piloto de cadena de frío en cuatro camiones #4472c4 false 2027-11-09 29 0 true |  |
| 201 | 6.7.1 Acta de certificación de la Etapa 1 (H5) | 2027-11-22 | 2027-12-01 | 8 | 8 | 204 | 201 6.7.1 Acta de certificación de la Etapa 1 (H5) #4472c4 false 2027-11-22 8 0 true |  |
| 202 | H5 · Entrega de expediente | 2027-11-24 | 2027-11-24 | 0 | 0 | 205 | 202 H5 · Entrega de expediente #404040 true 2027-11-24 0 0 true | True |
| 203 | H5 · Evidencia disponible (6.7.1) | 2027-11-24 | 2027-11-24 | 0 | 0 | 206 | 203 H5 · Evidencia disponible (6.7.1) #404040 true 2027-11-24 0 0 true | True |
| 204 | H5 · Revisión de la Contraparte (10 días hábiles) | 2027-11-25 | 2027-12-09 | 10 | 10 | 207 | 204 H5 · Revisión de la Contraparte (10 días hábiles) #4472c4 false 2027-11-25 10 0 true |  |
| 205 | 5.4.3 Saldos migrados desde el WMS de Talca | 2027-12-01 | 2027-12-31 | 22 | 22 | 208 | 205 5.4.3 Saldos migrados desde el WMS de Talca #c00000 false 2027-12-01 22 0 true |  |
| 206 | 5.4.4 Saldos cargados en Concepción desde el conteo físico | 2027-12-01 | 2027-12-31 | 22 | 22 | 209 | 206 5.4.4 Saldos cargados en Concepción desde el conteo físico #c00000 false 2027-12-01 22 0 true |  |

| id | name | start | end | duration | duration_gantt | order | attributes | milestone |
| --- | --- | --- | --- | --- | --- | --- | --- | --- |
| 207 | 7.1.4 Innovación 1: informe del piloto en marcha blanca y habilitación (INN-01.P4) | 2027-12-01 | 2028-04-28 | 106 | 107 | 210 | 207 7.1.4 Innovación 1: informe del piloto en marcha blanca y habilitación (INN-01.P4) #c00000 false 2027-12-01 107 0 true |  |
| 208 | 7.2.4 Innovación 2: informe de validación comparada (INN-02.P4, parte 1) | 2027-12-01 | 2028-04-28 | 106 | 107 | 211 | 208 7.2.4 Innovación 2: informe de validación comparada (INN-02.P4, parte 1) #c00000 false 2027-12-01 107 0 true |  |
| 209 | 7.3.4 Innovación 3: informe de validación en marcha blanca con Calidad (INN-03.P4) | 2027-12-01 | 2028-04-28 | 106 | 107 | 212 | 209 7.3.4 Innovación 3: informe de validación en marcha blanca con Calidad (INN-03.P4) #c00000 false 2027-12-01 107 0 true |  |
| 210 | 9.1.2 Procedimiento y ensayo de reversión de la Etapa 1 | 2027-12-01 | 2027-12-10 | 7 | 7 | 213 | 210 9.1.2 Procedimiento y ensayo de reversión de la Etapa 1 #4472c4 false 2027-12-01 7 0 true |  |
| 211 | 6.7.1 · Cierre del paquete | 2027-12-01 | 2027-12-01 | 0 | 0 | 214 | 211 6.7.1 · Cierre del paquete #404040 true 2027-12-01 0 0 true | True |
| 212 | 5.4.5 Acta de conciliación y corte fuera de las ventanas de congelamiento | 2028-01-03 | 2028-01-27 | 19 | 19 | 215 | 212 5.4.5 Acta de conciliación y corte fuera de las ventanas de congelamiento #4472c4 false 2028-01-03 19 0 true |  |
| 213 | H5 · Firma del acta | 2028-01-03 | 2028-01-03 | 0 | 0 | 216 | 213 H5 · Firma del acta #404040 true 2028-01-03 0 0 true | True |
| 214 | 2.1.2 Documento de línea base de alcance de la Etapa 2: canal moderno y costo de servir (H8) | 2028-02-01 | 2028-02-09 | 7 | 7 | 217 | 214 2.1.2 Documento de línea base de alcance de la Etapa 2: canal moderno y costo de servir (H8) #4472c4 false 2028-02-01 7 0 true |  |
| 215 | 2.2.4 Documento de diseño detallado de M11 y del intercambio con las cadenas | 2028-02-01 | 2028-02-15 | 11 | 11 | 218 | 215 2.2.4 Documento de diseño detallado de M11 y del intercambio con las cadenas #4472c4 false 2028-02-01 11 0 true |  |
| 216 | 7.5.1 Innovación 5: prototipo e informe de la prueba de comprensión (INN-05.P1) | 2028-02-01 | 2028-03-21 | 36 | 36 | 219 | 216 7.5.1 Innovación 5: prototipo e informe de la prueba de comprensión (INN-05.P1) #4472c4 false 2028-02-01 36 0 true |  |
| 217 | 9.5.7 Certificación de preventistas, conductores y preparadores (Etapa 1) | 2028-02-01 | 2028-03-24 | 39 | 39 | 220 | 217 9.5.7 Certificación de preventistas, conductores y preparadores (Etapa 1) #4472c4 false 2028-02-01 39 0 true |  |
| 218 | 9.2.1 Marcha blanca de la Etapa 1 | 2028-02-01 | 2028-04-30 | 63 | 65 | 221 | 218 9.2.1 Marcha blanca de la Etapa 1 #4472c4 false 2028-02-01 65 0 true |  |
| 219 | H6 · Inicio contractual de marcha blanca | 2028-02-01 | 2028-02-01 | 0 | 0 | 222 | 219 H6 · Inicio contractual de marcha blanca #c00000 true 2028-02-01 0 0 true | True |
| 220 | Etapa 2 · Desarrollo (meses 13 a 18) | 2028-02-01 | 2028-07-31 | 126 | 128 | 223 | 220 Etapa 2 · Desarrollo (meses 13 a 18) #4472c4 false 2028-02-01 128 0 true |  |
| 221 | H6 · Entrega de expediente | 2028-02-01 | 2028-02-01 | 0 | 0 | 224 | 221 H6 · Entrega de expediente #404040 true 2028-02-01 0 0 true | True |
| 222 | 2.8.2 Acta de aprobación del diseño detallado de la Etapa 2 (H8) | 2028-02-16 | 2028-02-25 | 8 | 8 | 225 | 222 2.8.2 Acta de aprobación del diseño detallado de la Etapa 2 (H8) #4472c4 false 2028-02-16 8 0 true |  |
| 223 | H8 · Entrega de expediente | 2028-02-24 | 2028-02-24 | 0 | 0 | 226 | 223 H8 · Entrega de expediente #404040 true 2028-02-24 0 0 true | True |
| 224 | H8 · Evidencia disponible (2.8.2) | 2028-02-24 | 2028-02-24 | 0 | 0 | 227 | 224 H8 · Evidencia disponible (2.8.2) #404040 true 2028-02-24 0 0 true | True |
| 225 | 2.8.2 · Cierre del paquete | 2028-02-25 | 2028-02-25 | 0 | 0 | 228 | 225 2.8.2 · Cierre del paquete #404040 true 2028-02-25 0 0 true | True |
| 226 | H8 · Revisión de la Contraparte (10 días hábiles) | 2028-02-25 | 2028-03-09 | 10 | 10 | 229 | 226 H8 · Revisión de la Contraparte (10 días hábiles) #4472c4 false 2028-02-25 10 0 true |  |
| 227 | E1 · Puerta de la ola de reparto | 2028-02-29 | 2028-02-29 | 0 | 0 | 230 | 227 E1 · Puerta de la ola de reparto #404040 true 2028-02-29 0 0 true | True |
| 228 | 7.5.2 Innovación 5: evaluación de privacidad y diseño de la impresión en cabina (INN-05.P2) | 2028-03-01 | 2028-04-19 | 35 | 36 | 231 | 228 7.5.2 Innovación 5: evaluación de privacidad y diseño de la impresión en cabina (INN-05.P2) #4472c4 false 2028-03-01 36 0 true |  |
| 229 | H8 · Firma del acta | 2028-03-09 | 2028-03-09 | 0 | 0 | 232 | 229 H8 · Firma del acta #404040 true 2028-03-09 0 0 true | True |
| 230 | 4.4.2 Portal web de clientes: cuenta, saldo, entregas y documentos | 2028-03-13 | 2028-04-28 | 34 | 35 | 233 | 230 4.4.2 Portal web de clientes: cuenta, saldo, entregas y documentos #c00000 false 2028-03-13 35 0 true |  |
| 231 | 4.4.1 Canal moderno y portal de proveedores (M11) | 2028-03-15 | 2028-04-28 | 32 | 33 | 234 | 231 4.4.1 Canal moderno y portal de proveedores (M11) #c00000 false 2028-03-15 33 0 true |  |
| 232 | 4.4.3 Portal web de transportistas: rutas asignadas del día siguiente | 2028-03-15 | 2028-04-28 | 32 | 33 | 235 | 232 4.4.3 Portal web de transportistas: rutas asignadas del día siguiente #c00000 false 2028-03-15 33 0 true |  |
| 233 | 4.5.2 Costo de servir por cliente y por entrega (M10 Analítica) | 2028-03-15 | 2028-04-28 | 32 | 33 | 236 | 233 4.5.2 Costo de servir por cliente y por entrega (M10 Analítica) #c00000 false 2028-03-15 33 0 true |  |
| 291 | 7.5.1 · Fin de referencia para la precedencia | 2028-03-21 | 2028-03-21 | 0 | 0 | 237 | 291 7.5.1 · Fin de referencia para la precedencia #404040 true 2028-03-21 0 0 true | True |
| 234 | 9.5.4 Traspaso al equipo de TI del CLIENTE | 2028-04-01 | 2028-09-30 | 123 | 126 | 238 | 234 9.5.4 Traspaso al equipo de TI del CLIENTE #4472c4 false 2028-04-01 126 0 true |  |
| 235 | 1.6.2 Primera actualización anual del Plan de Reversibilidad | 2028-04-03 | 2028-04-11 | 7 | 7 | 239 | 235 1.6.2 Primera actualización anual del Plan de Reversibilidad #4472c4 false 2028-04-03 7 0 true |  |
| 236 | 7.5.3 Innovación 5: cálculo y bloques 1 a 3 de la hoja de negocio (INN-05.P3) | 2028-04-03 | 2028-06-09 | 48 | 49 | 240 | 236 7.5.3 Innovación 5: cálculo y bloques 1 a 3 de la hoja de negocio (INN-05.P3) #4472c4 false 2028-04-03 49 0 true |  |
| 292 | 7.5.2 · Fin de referencia para la precedencia | 2028-04-19 | 2028-04-19 | 0 | 0 | 241 | 292 7.5.2 · Fin de referencia para la precedencia #404040 true 2028-04-19 0 0 true | True |
| 237 | H7 · Cierre de cuatro semanas de evidencia | 2028-04-30 | 2028-04-30 | 0 | 0 | 242 | 237 H7 · Cierre de cuatro semanas de evidencia #404040 true 2028-04-30 0 0 true | True |
| 238 | 5.3.2 Intercambio electrónico con las demás cadenas (INT-08) | 2028-05-02 | 2028-07-14 | 52 | 52 | 243 | 238 5.3.2 Intercambio electrónico con las demás cadenas (INT-08) #4472c4 false 2028-05-02 52 0 true |  |
| 239 | 6.1.2 Pruebas de integración y regresión sin afectar la Etapa 1 en producción (H9) | 2028-05-02 | 2028-05-18 | 13 | 13 | 244 | 239 6.1.2 Pruebas de integración y regresión sin afectar la Etapa 1 en producción (H9) #4472c4 false 2028-05-02 13 0 true |  |
| 240 | 9.4.1 Expediente y acta de aceptación de la Etapa 1 (H7) | 2028-05-02 | 2028-05-17 | 12 | 12 | 245 | 240 9.4.1 Expediente y acta de aceptación de la Etapa 1 (H7) #4472c4 false 2028-05-02 12 0 true |  |
| 241 | 9.6.2 Plan de gestión del cambio con cadenas y transportistas | 2028-05-02 | 2028-06-23 | 38 | 38 | 246 | 241 9.6.2 Plan de gestión del cambio con cadenas y transportistas #4472c4 false 2028-05-02 38 0 true |  |
| 242 | H7 · Entrega de expediente | 2028-05-02 | 2028-05-02 | 0 | 0 | 247 | 242 H7 · Entrega de expediente #404040 true 2028-05-02 0 0 true | True |
| 243 | H7 · Revisión de la Contraparte (10 días hábiles) | 2028-05-03 | 2028-05-16 | 10 | 10 | 248 | 243 H7 · Revisión de la Contraparte (10 días hábiles) #4472c4 false 2028-05-03 10 0 true |  |
| 244 | H7 · Firma del acta | 2028-05-16 | 2028-05-16 | 0 | 0 | 249 | 244 H7 · Firma del acta #404040 true 2028-05-16 0 0 true | True |
| 245 | 9.3.1 Estabilización y soporte puente E1 | 2028-05-17 | 2028-09-30 | 93 | 94 | 250 | 245 9.3.1 Estabilización y soporte puente E1 #4472c4 false 2028-05-17 94 0 true |  |
| 246 | H7 · Paso a producción | 2028-05-17 | 2028-05-17 | 0 | 0 | 251 | 246 H7 · Paso a producción #c00000 true 2028-05-17 0 0 true | True |
| 247 | 9.4.1 · Cierre del paquete | 2028-05-17 | 2028-05-17 | 0 | 0 | 252 | 247 9.4.1 · Cierre del paquete #404040 true 2028-05-17 0 0 true | True |
| 248 | H7 · Registro de producción y cumplimiento | 2028-05-17 | 2028-05-17 | 0 | 0 | 253 | 248 H7 · Registro de producción y cumplimiento #404040 true 2028-05-17 0 0 true | True |
| 249 | H9 · Entrega de expediente | 2028-05-18 | 2028-05-18 | 0 | 0 | 254 | 249 H9 · Entrega de expediente #404040 true 2028-05-18 0 0 true | True |
| 250 | 6.3.2 Pruebas de carga con ambas etapas activas y de resiliencia | 2028-05-19 | 2028-06-01 | 10 | 10 | 255 | 250 6.3.2 Pruebas de carga con ambas etapas activas y de resiliencia #4472c4 false 2028-05-19 10 0 true |  |
| 251 | 6.4.2 Prueba de recuperación ante desastres con ambas etapas | 2028-05-19 | 2028-06-01 | 10 | 10 | 256 | 251 6.4.2 Prueba de recuperación ante desastres con ambas etapas #4472c4 false 2028-05-19 10 0 true |  |
| 252 | 6.5.2 Prueba de seguridad ofensiva de la Etapa 2, por un tercero independiente | 2028-05-19 | 2028-05-26 | 6 | 6 | 257 | 252 6.5.2 Prueba de seguridad ofensiva de la Etapa 2, por un tercero independiente #4472c4 false 2028-05-19 6 0 true |  |
| 253 | 6.6.2 Demostración en Preproducción del despliegue sin interrupción de la Etapa 2 | 2028-05-19 | 2028-06-01 | 10 | 10 | 258 | 253 6.6.2 Demostración en Preproducción del despliegue sin interrupción de la Etapa 2 #4472c4 false 2028-05-19 10 0 true |  |
| 254 | H9 · Revisión de la Contraparte (10 días hábiles) | 2028-05-19 | 2028-06-01 | 10 | 10 | 259 | 254 H9 · Revisión de la Contraparte (10 días hábiles) #4472c4 false 2028-05-19 10 0 true |  |
| 255 | 7.4.1 Innovación 4: fórmula aprobada del tramo variable (INN-04.P1) | 2028-06-01 | 2028-06-09 | 7 | 7 | 260 | 255 7.4.1 Innovación 4: fórmula aprobada del tramo variable (INN-04.P1) #4472c4 false 2028-06-01 7 0 true |  |
| 256 | 9.1.3 Plan de implantación y reversión de la Etapa 2 | 2028-06-01 | 2028-06-09 | 7 | 7 | 261 | 256 9.1.3 Plan de implantación y reversión de la Etapa 2 #4472c4 false 2028-06-01 7 0 true |  |
| 257 | H9 · Firma del acta | 2028-06-01 | 2028-06-01 | 0 | 0 | 262 | 257 H9 · Firma del acta #404040 true 2028-06-01 0 0 true | True |
| 258 | 6.2.3 Pruebas de aceptación y de accesibilidad con cadenas, transportistas, Comercial y Finanzas | 2028-06-02 | 2028-06-15 | 10 | 10 | 263 | 258 6.2.3 Pruebas de aceptación y de accesibilidad con cadenas, transportistas, Comercial y Finanzas #4472c4 false 2028-06-02 10 0 true |  |
| 259 | 6.7.2 Acta de certificación de la Etapa 2 y cierre del desarrollo (H10) | 2028-06-16 | 2028-06-28 | 7 | 7 | 264 | 259 6.7.2 Acta de certificación de la Etapa 2 y cierre del desarrollo (H10) #4472c4 false 2028-06-16 7 0 true |  |
| 260 | H10 · Entrega de expediente | 2028-06-27 | 2028-06-27 | 0 | 0 | 265 | 260 H10 · Entrega de expediente #404040 true 2028-06-27 0 0 true | True |
| 261 | H10 · Evidencia disponible (6.7.2) | 2028-06-27 | 2028-06-27 | 0 | 0 | 266 | 261 H10 · Evidencia disponible (6.7.2) #404040 true 2028-06-27 0 0 true | True |
| 262 | 6.7.2 · Cierre del paquete | 2028-06-28 | 2028-06-28 | 0 | 0 | 267 | 262 6.7.2 · Cierre del paquete #404040 true 2028-06-28 0 0 true | True |
| 263 | H10 · Revisión de la Contraparte (10 días hábiles) | 2028-06-28 | 2028-07-11 | 10 | 10 | 268 | 263 H10 · Revisión de la Contraparte (10 días hábiles) #4472c4 false 2028-06-28 10 0 true |  |
| 264 | 7.5.4 Innovación 5: hoja certificada, en marcha blanca y en producción (INN-05.P4, primera parte) | 2028-07-03 | 2028-09-29 | 62 | 62 | 269 | 264 7.5.4 Innovación 5: hoja certificada, en marcha blanca y en producción (INN-05.P4, primera parte) #4472c4 false 2028-07-03 62 0 true |  |
| 265 | 9.5.8 Certificación de Comercial y Finanzas en costo de servir (Etapa 2) | 2028-07-03 | 2028-07-25 | 17 | 17 | 270 | 265 9.5.8 Certificación de Comercial y Finanzas en costo de servir (Etapa 2) #4472c4 false 2028-07-03 17 0 true |  |
| 266 | H10 · Firma del acta | 2028-07-11 | 2028-07-11 | 0 | 0 | 271 | 266 H10 · Firma del acta #404040 true 2028-07-11 0 0 true | True |
| 267 | 9.2.2 Marcha blanca de la Etapa 2 | 2028-08-01 | 2028-09-30 | 41 | 42 | 272 | 267 9.2.2 Marcha blanca de la Etapa 2 #4472c4 false 2028-08-01 42 0 true |  |
| 268 | H11 · Inicio contractual de marcha blanca | 2028-08-01 | 2028-08-01 | 0 | 0 | 273 | 268 H11 · Inicio contractual de marcha blanca #c00000 true 2028-08-01 0 0 true | True |
| 269 | H11 · Entrega de expediente | 2028-08-01 | 2028-08-01 | 0 | 0 | 274 | 269 H11 · Entrega de expediente #404040 true 2028-08-01 0 0 true | True |
| 270 | E2 · Cadenas habilitadas antes de F − 28 | 2028-08-31 | 2028-08-31 | 0 | 0 | 275 | 270 E2 · Cadenas habilitadas antes de F − 28 #404040 true 2028-08-31 0 0 true | True |
| 271 | 9.4.3 Garantía de correcto funcionamiento constituida (H12) | 2028-09-13 | 2028-09-25 | 7 | 7 | 276 | 271 9.4.3 Garantía de correcto funcionamiento constituida (H12) #4472c4 false 2028-09-13 7 0 true |  |
| 272 | H12 · Cierre de cuatro semanas de evidencia | 2028-09-30 | 2028-09-30 | 0 | 0 | 277 | 272 H12 · Cierre de cuatro semanas de evidencia #404040 true 2028-09-30 0 0 true | True |
| 273 | Mes 21 · Cobertura de transición previa al corte E2 | 2028-10-01 | 2028-10-17 | 11 | 12 | 278 | 273 Mes 21 · Cobertura de transición previa al corte E2 #4472c4 false 2028-10-01 12 0 true |  |
| 274 | 6.8.6 Entrega del código fuente, la infraestructura como código y los procedimientos de despliegue | 2028-10-02 | 2028-10-11 | 7 | 7 | 279 | 274 6.8.6 Entrega del código fuente, la infraestructura como código y los procedimientos de despliegue #4472c4 false 2028-10-02 7 0 true |  |

| id | name | start | end | duration | duration_gantt | order | attributes | milestone |
| --- | --- | --- | --- | --- | --- | --- | --- | --- |
| 275 | 9.4.2 Expediente y acta de aceptación final (H12) | 2028-10-02 | 2028-10-18 | 12 | 12 | 280 | 275 9.4.2 Expediente y acta de aceptación final (H12) #4472c4 false 2028-10-02 12 0 true |  |
| 276 | H12 · Entrega de expediente | 2028-10-02 | 2028-10-02 | 0 | 0 | 281 | 276 H12 · Entrega de expediente #404040 true 2028-10-02 0 0 true | True |
| 277 | H12 · Revisión de la Contraparte (10 días hábiles) | 2028-10-03 | 2028-10-17 | 10 | 10 | 282 | 277 H12 · Revisión de la Contraparte (10 días hábiles) #4472c4 false 2028-10-03 10 0 true |  |
| 278 | H12 · Firma del acta | 2028-10-17 | 2028-10-17 | 0 | 0 | 283 | 278 H12 · Firma del acta #404040 true 2028-10-17 0 0 true | True |
| 279 | 9.3.2 Estabilización de la Etapa 2 | 2028-10-18 | 2028-11-30 | 30 | 30 | 284 | 279 9.3.2 Estabilización de la Etapa 2 #4472c4 false 2028-10-18 30 0 true |  |
| 280 | H12 · Paso a producción | 2028-10-18 | 2028-10-18 | 0 | 0 | 285 | 280 H12 · Paso a producción #c00000 true 2028-10-18 0 0 true | True |
| 281 | 9.4.2 · Cierre del paquete | 2028-10-18 | 2028-10-18 | 0 | 0 | 286 | 281 9.4.2 · Cierre del paquete #404040 true 2028-10-18 0 0 true | True |
| 282 | Producto 10 · Operación con ambos alcances (meses 21 a 56) | 2028-10-18 | 2031-09-30 | 730 | 730 | 287 | 282 Producto 10 · Operación con ambos alcances (meses 21 a 56) #4472c4 false 2028-10-18 730 0 true |  |
| 283 | H12 · Registro de producción y cumplimiento | 2028-10-18 | 2028-10-18 | 0 | 0 | 288 | 283 H12 · Registro de producción y cumplimiento #404040 true 2028-10-18 0 0 true | True |
| 284 | 1.7.9 Informe de lecciones aprendidas y archivo de la implementación | 2028-10-26 | 2028-11-07 | 7 | 7 | 289 | 284 1.7.9 Informe de lecciones aprendidas y archivo de la implementación #4472c4 false 2028-10-26 7 0 true |  |
| 285 | 10.5.1 Traspaso de reversibilidad y acompañamiento de salida | 2031-08-01 | 2031-09-30 | 40 | 40 | 290 | 285 10.5.1 Traspaso de reversibilidad y acompañamiento de salida #4472c4 false 2031-08-01 40 0 true |  |
| 286 | 10.5.2 Certificado de devolución o eliminación de datos personales | 2031-09-01 | 2031-09-09 | 7 | 7 | 291 | 286 10.5.2 Certificado de devolución o eliminación de datos personales #4472c4 false 2031-09-01 7 0 true |  |

Links (source, target, type, difference, hardness):
- 1 2 1 0 Rubber
- 1 3 1 0 Rubber
- 1 15 2 0 Rubber
- 1 4 1 0 Rubber
- 1 6 1 0 Rubber
- 1 7 1 0 Rubber
- 1 9 1 0 Rubber
- 2 8 1 0 Rubber
- 3 128 2 119 Rubber
- 4 5 1 0 Rubber
- 4 28 2 13 Rubber
- 4 33 2 13 Rubber
- 5 177 2 162 Rubber
- 6 26 2 13 Rubber
- 6 27 2 13 Rubber
- 7 21 2 13 Rubber
- 8 16 2 13 Rubber
- 8 19 2 13 Rubber
- 8 22 2 13 Rubber
- 8 23 1 20 Rubber
- 8 24 2 13 Rubber
- 8 25 2 13 Rubber
- 8 29 2 13 Rubber
- 8 46 2 35 Rubber
- 8 30 2 13 Rubber
- 9 84 2 77 Rubber
- 9 85 2 77 Rubber
- 9 96 2 84 Rubber
- 9 118 2 97 Rubber
- 9 152 2 129 Rubber
- 9 123 2 110 Rubber
- 9 172 2 162 Rubber
- 9 238 2 311 Rubber
- 10 24 1 20 Rubber
- 10 11 1 0 Rubber
- 10 34 2 1 Rubber
- 10 35 2 1 Rubber
- 11 35 2 1 Rubber
- 11 69 2 44 Rubber
- 12 44 2 0 Rubber
- 12 32 1 20 Rubber
- 12 161 2 106 Rubber
- 13 145 2 66 Rubber
- 15 20 2 6 Rubber
- 16 17 1 0 Rubber
- 16 22 1 0 Rubber
- 17 18 1 0 Rubber
- 18 36 2 -1 Rubber
- 22 36 2 -1 Rubber
- 23 53 2 19 Rubber
- 23 26 1 0 Rubber
- 23 51 2 14 Rubber
- 24 53 2 19 Rubber
- 24 39 2 2 Rubber
- 24 41 2 2 Rubber
- 24 42 2 2 Rubber
- 24 51 2 14 Rubber
- 24 31 1 0 Rubber
- 24 65 2 24 Rubber
- 24 66 2 24 Rubber
- 25 53 2 19 Rubber
- 25 51 2 14 Rubber
- 25 83 2 44 Rubber
- 25 135 2 88 Rubber
- 25 46 1 22 Rubber
- 26 53 2 19 Rubber
- 26 40 2 2 Rubber
- 26 51 2 14 Rubber
- 26 82 2 44 Rubber
- 27 53 2 19 Rubber
- 27 51 2 14 Rubber
- 28 43 2 2 Rubber
- 29 45 1 22 Rubber
- 29 288 2 -1 Rubber
- 30 87 2 57 Rubber
- 31 59 2 37 Rubber
- 31 60 2 37 Rubber
- 31 61 2 37 Rubber
- 31 62 2 37 Rubber
- 31 63 2 37 Rubber
- 31 81 2 57 Rubber
- 31 64 2 37 Rubber
- 32 44 2 12 Rubber
- 32 200 2 164 Rubber
- 33 177 2 89 Rubber
- 33 178 2 89 Rubber
- 34 67 2 24 Rubber
- 34 131 2 86 Rubber
- 34 70 2 24 Rubber
- 35 87 2 56 Rubber
- 35 47 2 14 Rubber
- 35 48 2 14 Rubber
- 35 49 2 14 Rubber
- 35 50 2 14 Rubber
- 35 68 2 36 Rubber
- 35 70 2 36 Rubber
- 36 37 2 1 Rubber
- 37 38 2 -1 Rubber
- 38 23 3 4 Rubber
- 39 235 2 249 Rubber
- 40 53 2 5 Rubber
- 40 51 2 0 Rubber
- 41 42 1 0 Rubber
- 43 56 2 1 Rubber
- 43 93 2 28 Rubber
- 43 94 2 28 Rubber
- 43 104 2 34 Rubber
- 43 105 2 34 Rubber
- 43 106 2 34 Rubber
- 43 95 2 28 Rubber
- 43 145 2 67 Rubber
- 43 139 2 66 Rubber
- 43 127 2 62 Rubber
- 43 147 2 70 Rubber
- 43 157 2 80 Rubber
- 44 57 2 0 Rubber
- 44 200 2 130 Rubber
- 44 105 2 33 Rubber
- 44 106 2 33 Rubber
- 44 161 2 84 Rubber
- 45 86 1 42 Rubber
- 45 289 2 -1 Rubber
- 46 90 1 46 Rubber
- 46 290 2 -1 Rubber
- 47 68 2 8 Rubber
- 47 69 2 8 Rubber
- 48 68 2 8 Rubber
- 49 68 2 8 Rubber
- 50 68 2 8 Rubber
- 51 53 1 5 Rubber
- 51 55 2 -1 Rubber
- 288 45 4 36 Rubber
- 52 54 2 1 Rubber
- 53 55 1 3 Rubber
- 53 52 1 0 Rubber
- 54 71 2 -1 Rubber
- 56 195 2 105 Rubber
- 57 200 2 111 Rubber
- 57 105 2 14 Rubber
- 57 106 2 14 Rubber
- 57 161 2 65 Rubber
- 58 73 1 7 Rubber
- 58 76 2 -1 Rubber
- 59 77 2 0 Rubber
- 59 78 2 0 Rubber
- 59 79 2 0 Rubber
- 59 58 1 0 Rubber
- 60 77 2 0 Rubber
- 60 78 2 0 Rubber
- 60 79 2 0 Rubber
- 61 106 2 13 Rubber
- 61 96 2 7 Rubber
- 62 77 2 0 Rubber
- 62 78 2 0 Rubber
- 62 79 2 0 Rubber
- 63 77 2 0 Rubber
- 63 78 2 0 Rubber
- 63 79 2 0 Rubber
- 68 74 2 0 Rubber
- 68 75 2 0 Rubber
- 68 88 2 6 Rubber
- 68 91 2 10 Rubber
- 69 119 2 26 Rubber
- 70 176 2 91 Rubber
- 70 97 2 13 Rubber
- 70 98 2 13 Rubber
- 70 99 2 13 Rubber
- 71 73 2 2 Rubber
- 71 83 2 15 Rubber
- 71 89 2 19 Rubber
- 71 158 2 79 Rubber
- 71 159 2 79 Rubber
- 71 160 2 79 Rubber
- 71 93 2 22 Rubber
- 71 94 2 22 Rubber
- 71 104 2 28 Rubber
- 71 105 2 28 Rubber
- 71 106 2 28 Rubber
- 71 95 2 22 Rubber
- 71 145 2 61 Rubber
- 71 139 2 60 Rubber
- 71 127 2 56 Rubber
- 71 147 2 64 Rubber
- 71 157 2 74 Rubber
- 71 85 2 15 Rubber
- 71 130 2 57 Rubber
- 71 72 2 1 Rubber
- 73 76 1 12 Rubber
- 74 92 1 12 Rubber
- 74 122 2 -1 Rubber
- 75 97 2 0 Rubber
- 75 98 2 0 Rubber
- 75 99 2 0 Rubber
- 76 77 1 1 Rubber
- 76 93 4 47 Rubber
- 76 94 4 42 Rubber
- 76 104 4 47 Rubber
- 76 105 4 60 Rubber
- 76 106 4 54 Rubber
- 76 95 4 46 Rubber
- 76 145 4 78 Rubber
- 76 139 4 83 Rubber
- 76 127 4 76 Rubber
- 76 147 4 86 Rubber
- 76 157 4 85 Rubber
- 76 129 1 43 Rubber
- 77 110 2 0 Rubber
- 77 80 1 0 Rubber
- 77 93 3 32 Rubber
- 77 94 3 27 Rubber
- 77 104 3 32 Rubber
- 77 105 3 45 Rubber
- 77 106 3 39 Rubber
- 77 95 3 31 Rubber
- 77 145 3 63 Rubber
- 77 139 3 68 Rubber
- 77 127 3 61 Rubber
- 77 147 3 71 Rubber
- 77 157 3 70 Rubber
- 78 110 2 0 Rubber
- 78 93 3 32 Rubber
- 78 94 3 27 Rubber
- 78 104 3 32 Rubber
- 78 105 3 45 Rubber
- 78 106 3 39 Rubber
- 78 95 3 31 Rubber
- 78 145 3 63 Rubber
- 78 139 3 68 Rubber
- 78 127 3 61 Rubber
- 78 147 3 71 Rubber
- 78 157 3 70 Rubber
- 78 172 1 85 Rubber
- 79 110 2 0 Rubber
- 79 93 3 32 Rubber
- 79 94 3 27 Rubber
- 79 104 3 32 Rubber
- 79 105 3 45 Rubber
- 79 106 3 39 Rubber
- 79 95 3 31 Rubber
- 79 145 3 63 Rubber
- 79 139 3 68 Rubber
- 79 127 3 61 Rubber
- 79 147 3 71 Rubber
- 79 157 3 70 Rubber
- 80 110 2 0 Rubber
- 80 93 3 32 Rubber
- 80 94 3 27 Rubber
- 80 104 3 32 Rubber
- 80 105 3 45 Rubber
- 80 106 3 39 Rubber
- 80 95 3 31 Rubber
- 80 145 3 63 Rubber
- 80 139 3 68 Rubber
- 80 127 3 61 Rubber
- 80 147 3 71 Rubber
- 80 157 3 70 Rubber
- 81 181 2 69 Rubber
- 82 89 1 4 Rubber
- 82 159 2 18 Rubber
- 82 93 1 7 Rubber
- 82 94 1 7 Rubber
- 82 104 1 13 Rubber
- 82 105 1 13 Rubber
- 82 106 1 13 Rubber
- 82 95 1 7 Rubber
- 82 145 1 46 Rubber
- 82 139 1 45 Rubber
- 82 127 1 41 Rubber
- 82 147 1 49 Rubber
- 82 157 1 59 Rubber
- 83 158 2 20 Rubber
- 83 93 1 7 Rubber
- 83 94 1 7 Rubber
- 83 104 1 13 Rubber
- 83 105 1 13 Rubber
- 83 106 1 13 Rubber
- 83 95 1 7 Rubber
- 83 145 1 46 Rubber
- 83 139 1 45 Rubber
- 83 127 1 41 Rubber
- 83 147 1 49 Rubber
- 83 157 1 59 Rubber
- 84 93 1 7 Rubber
- 84 94 1 7 Rubber
- 84 104 1 13 Rubber
- 84 105 1 13 Rubber
- 84 106 1 13 Rubber
- 84 95 1 7 Rubber
- 84 145 1 46 Rubber
- 84 139 1 45 Rubber
- 84 127 1 41 Rubber
- 84 147 1 49 Rubber
- 84 157 1 59 Rubber
- 84 135 2 23 Rubber
- 85 93 1 7 Rubber
- 85 94 1 7 Rubber
- 85 104 1 13 Rubber
- 85 105 1 13 Rubber
- 85 106 1 13 Rubber
- 85 95 1 7 Rubber
- 85 145 1 46 Rubber
- 85 139 1 45 Rubber
- 85 127 1 41 Rubber
- 85 147 1 49 Rubber
- 85 157 1 59 Rubber
- 86 208 2 35 Rubber
- 87 197 2 100 Rubber
- 87 182 2 81 Rubber
- 87 198 2 100 Rubber
- 87 183 2 81 Rubber
- 88 109 2 0 Rubber
- 89 93 1 3 Rubber
- 89 94 1 3 Rubber
- 89 104 1 9 Rubber
- 89 105 1 9 Rubber
- 89 106 1 9 Rubber
- 89 95 1 3 Rubber
- 89 145 1 42 Rubber
- 89 139 1 41 Rubber
- 89 127 1 37 Rubber
- 89 147 1 45 Rubber
- 89 157 1 55 Rubber
- 90 175 2 8 Rubber
- 289 86 4 85 Rubber
- 290 90 4 71 Rubber
- 92 121 2 21 Rubber
- 92 97 2 1 Rubber
- 92 98 2 1 Rubber
- 92 99 2 1 Rubber
- 93 107 1 6 Rubber
- 93 108 1 6 Rubber
- 93 140 2 -1 Rubber
- 94 100 1 4 Rubber
- 94 104 1 6 Rubber
- 94 101 1 4 Rubber
- 94 105 1 6 Rubber
- 94 106 1 6 Rubber
- 94 95 1 0 Rubber
- 94 124 2 -1 Rubber
- 95 102 1 4 Rubber
- 95 103 1 4 Rubber
- 95 136 2 -1 Rubber
- 96 93 1 0 Rubber
- 96 94 1 0 Rubber
- 96 104 1 6 Rubber
- 96 105 1 6 Rubber
- 96 106 1 6 Rubber
- 96 95 1 0 Rubber
- 96 145 1 39 Rubber
- 96 139 1 38 Rubber
- 96 127 1 34 Rubber
- 96 147 1 42 Rubber
- 96 157 1 52 Rubber
- 99 110 2 0 Rubber
- 100 116 2 7 Rubber
- 100 125 2 29 Rubber
- 101 117 2 7 Rubber
- 101 126 2 29 Rubber
- 102 151 2 40 Rubber
- 102 137 2 33 Rubber
- 103 149 2 38 Rubber
- 103 138 2 33 Rubber
- 104 112 1 4 Rubber
- 104 113 1 4 Rubber
- 104 141 2 -1 Rubber
- 105 156 2 -1 Rubber
- 106 200 2 57 Rubber
- 106 180 2 34 Rubber
- 107 114 2 5 Rubber
- 107 132 2 29 Rubber
- 108 115 2 5 Rubber
- 108 142 2 32 Rubber
- 110 111 2 1 Rubber
- 111 120 2 -1 Rubber
- 112 150 2 34 Rubber
- 112 143 2 28 Rubber
- 113 148 2 32 Rubber
- 113 144 2 28 Rubber
- 114 133 1 25 Rubber
- 115 154 1 38 Rubber
- 116 134 1 25 Rubber
- 117 155 1 38 Rubber
- 118 185 2 54 Rubber
- 118 180 2 44 Rubber
- 118 197 2 64 Rubber
- 119 131 2 8 Rubber
- 120 121 2 3 Rubber
- 121 122 1 1 Rubber
- 122 219 1 141 Rubber
- 123 185 2 44 Rubber
- 123 180 2 34 Rubber
- 124 127 1 1 Rubber
- 124 180 1 47 Rubber
- 125 134 2 3 Rubber
- 125 124 1 0 Rubber
- 126 155 2 16 Rubber
- 126 124 1 0 Rubber
- 127 180 2 12 Rubber
- 128 185 2 32 Rubber
- 128 180 2 22 Rubber
- 130 173 1 43 Rubber
- 130 174 1 43 Rubber
- 130 287 2 -1 Rubber
- 131 182 2 32 Rubber
- 131 183 2 32 Rubber
- 132 133 2 1 Rubber
- 132 140 1 3 Rubber
- 133 141 1 2 Rubber
- 134 141 1 2 Rubber
- 135 179 2 0 Rubber
- 135 212 2 62 Rubber
- 136 139 1 1 Rubber
- 136 180 1 43 Rubber
- 137 163 2 30 Rubber
- 137 136 1 0 Rubber
- 138 166 2 36 Rubber
- 138 136 1 0 Rubber
- 139 146 1 3 Rubber
- 139 147 1 4 Rubber
- 139 167 2 -1 Rubber
- 140 145 1 1 Rubber
- 140 180 1 42 Rubber
- 141 180 1 42 Rubber
- 142 154 2 11 Rubber
- 142 140 1 0 Rubber
- 143 162 2 29 Rubber
- 143 141 1 0 Rubber
- 144 165 2 35 Rubber
- 144 141 1 0 Rubber
- 145 164 2 -1 Rubber
- 146 153 2 6 Rubber
- 146 168 2 33 Rubber
- 147 170 2 -1 Rubber
- 148 165 1 31 Rubber
- 149 166 1 31 Rubber
- 150 162 1 23 Rubber
- 151 163 1 23 Rubber
- 152 185 2 25 Rubber
- 152 180 2 15 Rubber
- 153 169 1 28 Rubber
- 154 156 1 2 Rubber
- 155 156 1 2 Rubber
- 156 200 1 52 Rubber
- 156 157 1 1 Rubber
- 156 180 1 29 Rubber
- 157 180 2 3 Rubber
- 158 185 2 12 Rubber
- 158 180 2 2 Rubber
- 159 185 2 12 Rubber
- 159 160 1 0 Rubber
- 159 180 2 2 Rubber
- 160 185 2 12 Rubber
- 160 180 2 2 Rubber
- 161 171 1 20 Rubber
- 161 227 2 31 Rubber
- 162 164 1 2 Rubber
- 163 164 1 2 Rubber
- 164 180 1 11 Rubber
- 165 167 1 1 Rubber
- 166 167 1 1 Rubber
- 167 180 1 6 Rubber
- 167 216 1 88 Rubber
- 168 169 2 1 Rubber
- 168 167 1 0 Rubber
- 169 170 1 2 Rubber
- 170 180 1 3 Rubber
- 171 200 2 26 Rubber
- 172 268 2 41 Rubber
- 172 238 1 149 Rubber
- 172 241 1 149 Rubber
- 173 207 2 7 Rubber
- 174 207 2 7 Rubber
- 175 209 2 7 Rubber
- 177 227 2 97 Rubber
- 178 227 2 97 Rubber
- 179 205 2 19 Rubber
- 179 206 2 19 Rubber
- 179 212 2 41 Rubber
- 179 210 2 19 Rubber
- 180 185 1 10 Rubber
- 180 187 2 -1 Rubber
- 287 173 4 29 Rubber
- 287 174 4 29 Rubber
- 184 186 2 1 Rubber
- 185 187 1 2 Rubber
- 185 184 1 0 Rubber
- 186 199 2 -1 Rubber
- 187 200 1 11 Rubber
- 187 188 1 1 Rubber
- 187 189 1 1 Rubber
- 187 190 1 1 Rubber
- 187 191 1 1 Rubber
- 187 192 1 1 Rubber
- 187 193 1 1 Rubber
- 187 194 1 6 Rubber
- 188 203 2 2 Rubber
- 188 201 2 0 Rubber
- 188 210 2 7 Rubber
- 189 203 2 2 Rubber
- 189 201 2 0 Rubber
- 190 203 2 8 Rubber
- 190 201 2 6 Rubber
- 191 203 2 8 Rubber
- 191 201 2 6 Rubber
- 192 203 2 8 Rubber
- 192 201 2 6 Rubber
- 193 203 2 8 Rubber
- 193 201 2 6 Rubber
- 194 219 2 57 Rubber
- 194 210 2 14 Rubber
- 194 195 1 0 Rubber
- 195 196 1 0 Rubber
- 195 217 2 26 Rubber
- 199 200 2 3 Rubber
- 200 227 2 50 Rubber
- 201 203 1 2 Rubber
- 201 211 2 -1 Rubber
- 202 204 2 1 Rubber
- 203 211 1 5 Rubber
- 203 202 1 0 Rubber
- 204 213 2 16 Rubber
- 205 212 2 0 Rubber
- 206 212 2 0 Rubber
- 210 219 2 36 Rubber
- 210 256 2 123 Rubber
- 212 219 2 2 Rubber
- 213 219 2 21 Rubber
- 213 214 2 21 Rubber
- 214 224 2 10 Rubber
- 214 215 1 0 Rubber
- 214 222 2 4 Rubber
- 214 231 2 24 Rubber
- 214 230 2 22 Rubber
- 214 232 2 24 Rubber
- 214 233 2 24 Rubber
- 214 216 1 0 Rubber
- 215 224 2 6 Rubber
- 215 222 2 0 Rubber
- 216 228 1 21 Rubber
- 216 236 1 45 Rubber
- 216 291 2 -1 Rubber
- 217 242 2 26 Rubber
- 218 237 2 -1 Rubber
- 218 217 1 0 Rubber
- 219 218 1 0 Rubber
- 221 219 1 0 Rubber
- 222 224 1 6 Rubber
- 222 225 2 -1 Rubber
- 223 226 2 1 Rubber
- 224 225 1 1 Rubber
- 224 223 1 0 Rubber
- 226 229 2 -1 Rubber
- 227 237 2 44 Rubber
- 228 236 1 24 Rubber
- 228 292 2 -1 Rubber
- 229 231 2 4 Rubber
- 229 230 2 2 Rubber
- 229 232 2 4 Rubber
- 229 233 2 4 Rubber
- 229 241 2 38 Rubber
- 230 239 2 1 Rubber
- 231 172 3 23 Rubber
- 231 238 3 53 Rubber
- 231 239 2 1 Rubber
- 232 239 2 1 Rubber
- 233 239 2 1 Rubber
- 233 255 2 23 Rubber
- 233 265 2 43 Rubber
- 291 228 4 22 Rubber
- 291 236 4 59 Rubber
- 234 276 2 1 Rubber
- 236 264 2 13 Rubber
- 292 236 4 38 Rubber
- 237 242 2 1 Rubber
- 238 270 2 32 Rubber
- 239 249 2 -1 Rubber
- 239 261 2 25 Rubber
- 239 258 2 10 Rubber
- 239 250 2 0 Rubber
- 239 251 2 0 Rubber
- 239 252 2 0 Rubber
- 239 253 2 0 Rubber
- 239 259 2 20 Rubber
- 239 256 2 9 Rubber
- 240 247 2 -1 Rubber
- 242 243 2 1 Rubber
- 242 240 1 0 Rubber
- 243 244 2 -1 Rubber
- 244 246 2 1 Rubber
- 246 248 1 0 Rubber
- 246 245 1 0 Rubber
- 248 247 1 0 Rubber
- 249 254 2 1 Rubber
- 250 261 2 15 Rubber
- 250 259 2 10 Rubber
- 251 261 2 15 Rubber
- 251 259 2 10 Rubber
- 252 261 2 19 Rubber
- 252 259 2 14 Rubber
- 253 261 2 15 Rubber
- 253 259 2 10 Rubber
- 254 257 2 -1 Rubber
- 256 268 2 34 Rubber
- 258 261 2 5 Rubber
- 258 259 2 0 Rubber
- 258 265 2 9 Rubber
- 259 261 1 5 Rubber
- 259 262 2 -1 Rubber
- 260 263 2 1 Rubber
- 261 262 1 1 Rubber
- 261 260 1 0 Rubber
- 263 266 2 -1 Rubber
- 265 276 2 47 Rubber
- 266 268 2 15 Rubber
- 266 274 2 58 Rubber
- 266 271 2 45 Rubber
- 267 272 2 -1 Rubber
- 268 267 1 0 Rubber
- 269 268 1 0 Rubber
- 270 272 2 20 Rubber
- 271 276 2 6 Rubber
- 272 276 2 2 Rubber
- 273 282 2 0 Rubber
- 274 278 2 3 Rubber
- 275 281 2 -1 Rubber
- 276 277 2 1 Rubber
- 276 275 1 0 Rubber
- 277 278 2 -1 Rubber
- 278 280 2 1 Rubber
- 280 283 1 0 Rubber
- 280 279 1 0 Rubber
- 280 282 1 0 Rubber
- 281 284 1 6 Rubber
- 283 281 1 0 Rubber
- 285 286 1 20 Rubber
